| id | name | wbsId | level | category | subCategory | organization | manager | collaborator | startDate | endDate | duration | weight | plannedRate | actualRate | deviation | budget | deliverable | note | status | predecessor |
| --- | --- | --- | --- | --- | --- | --- | --- | --- | --- | --- | --- | --- | --- | --- | --- | --- | --- | --- | --- | --- |
| 38750aa9-577d-81d3-bac1-e5fc640f4506 | [4.1.3] 구축 관리 | 4.1.3 | 3 | 서비스 구축 | 구축 관리 / 토목(상하수/오수/전기/통신 등) 및 이동형 트레일러 상세 배치안을 기반으로 실구축 진행 | 제일엔지니어링 | PM, PMO, 감리, 기술총괄 | PM, PMO, 기술총괄, 감리 | 2026-10-01 | 2026-12-18 | 79 | 0.0 | 0.0 | 0.0 | 0.0 | 0 | 구축업체 회의록, 정기보고서, 분석, 설계 자료 등 | 9/29 일정 변경 | 대기 |  |
| 38750aa9-577d-8179-a713-c6048a947bd6 | [4.1.2] 나라장터 입찰 공고 낙찰자(업체선정) 계약 업무 진행 및 기술협상 실시, 계약 | 4.1.2 | 3 | 서비스 구축 | 나라장터 입찰 공고 낙찰자(업체선정) 계약 업무 진행 및 기술협상 실시, 계약 / 기술협상, 제품 규격서, 구축 일정 등 협의 / 착수보고 및 착수자료(WBS, 물품내역서) 취합 | 제일엔지니어링 | 담당 PL(NOP) | PM, PMO, 행정/전산관리, 기술총괄 | 2026-04-01 | 2026-09-21 | 174 | 0.0 | 100 | 100 | 0.0 | 0 | 기술협상 결과 보고서 | 지연 / 디지털 OASIS SPOT 미확정에 따름 / 최초 계획 기준 계획공정 100%(완료되었어야 함) | 완료 |  |
| 38750aa9-577d-81bd-a951-c01b6ab50d17 | [4.1.1] 대상지 현장실사 | 4.1.1 | 3 | 서비스 구축 | 대상지 현장실사 / 시유지, 도유지 대상 디지털 OASIS SPOT 대상지 현장실사 및 확정 | 제일엔지니어링 | 담당 PL(NOP) | PMO | 2024-01-01 | 2026-09-22 | 996 | 0.0 | 100 | 100 | 0.0 | 0 | 현장실사보고서 | 완료 / 구축 업체 선정 후 디지털 OASIS SPOT 대상지 정밀 실사는 별도 진행 / -9/29 시공 업체 실사 및 기존 시설물 처리 검토 완료 | 완료 |  |
| 38750aa9-577d-81eb-94c1-c2ec3195be47 | [4.13] 스마트폴&디스플레이 | 4.13 | 2 | 서비스 구축 | 스마트폴&디스플레이 / 요구사항 정합화→설계→개발/구축→연계→단위/통합 테스트 | 제일엔지니어링 | 담당 PL(편의시설) | 플랫폼/보안 | 2026-04-01 | 2026-08-31 | 153 | 0.0 | 93.0 | 83.0 | -10.0 | 0 | 네트워크 구축 용역 | 진행 중 | 진행중 |  |
| 38750aa9-577d-81a6-b053-e5714c46e044 | [4.12] 이노베이션 관제 센터 구축 | 4.12 | 2 | 서비스 구축 | 이노베이션 관제 센터 구축 / 이노베이션 센터 실시설계 및 인테리어 시공 | 제일엔지니어링 |  |  | 2024-10-01 | 2025-06-30 | 273 | 0.0 | 100 | 100 | 0.0 | 0 | 시설물 위치기반 표준 플랫폼 | 완료 / 준공 완료 | 완료 |  |
| 38750aa9-577d-8105-a7c6-eee8a9edc9f0 | [4.11] 시설물 위치기반 표준 서비스 플랫폼 | 4.11 | 2 | 서비스 구축 | 시설물 위치기반 표준 서비스 플랫폼 / 요구사항 정합화→설계→개발/구축→연계→단위/통합 테스트 | 제일엔지니어링 | 담당 PL:(표준플랫폼) |  | 2026-04-01 | 2026-08-31 | 153 | 0.0 | 97.0 | 83.0 | -13.0 | 0 | 시설물 위치기반 표준 플랫폼 | 진행 중 | 진행중 |  |
| 36050aa9-577d-8192-ac54-fc16f966f150 | [7] 구축 완료 후 운영(3년) | 7 | 1 | 준공/검수/이관 | 구축 완료 후 운영(3년) / 운영·유지관리, SLA, 모니터링, 기능개선/고도화(계약 범위에 따라) | 제일엔지니어링 | 운영 | 전 서비스 | 2026-01-01 | 2028-12-31 | 1096 | 2.5 | 0.0 | 40.0 | 40.0 | 0 | 설계보고서(사업개요/일정) | 진행 중 / 3년 운영 예산 및 계획 수립 중 | 진행중 | ◆M3 |
| 33750aa9-577d-81e1-9b40-e989d319cc7b | Slack to Notion 자동화 오류 수정 - Claude |  |  |  |  | 제일엔지니어링 |  |  |  |  | 0 | 0.0 | 0.0 | 0.0 | 0.0 | 0 |  |  | 대기 |  |
| 33650aa9-577d-813d-afb7-dd8a4ed19a15 | [4.14.3] 시설 구축 및 관련 플랫폼 데이터 연동 | 4.14.3 | 3 | 서비스 구축 | 시설 구축 및 관련 플랫폼 데이터 연동 / 디지털 OASIS SPOT 및 이노베이션 센터 각 1개소 구축 / 판매 데이터, CCTV 연계, 디지털 노마드 접수/운영/거래 | 제일엔지니어링 | 담당 PL(편의시설) | PM, PMO, 기술총괄, 감리 | 2026-05-01 | 2026-07-31 | 92 | 0.0 | 0.0 | 0.0 | 0.0 | 0 | 준공도서 | 진행 중 / 계획 수립 | 진행중 |  |
| 33650aa9-577d-81d7-a1db-fd392d72380e | [4.14.2] 현장실사 및 현장 여건을 반영한 구축 계획 수립 | 4.14.2 | 3 | 서비스 구축 | 현장실사 및 현장 여건을 반영한 구축 계획 수립 / 납품 물량 입고 계획 수립 / 요구사항 및 실시설계자료 기반 상세 구축 계획 수립 | 제일엔지니어링 | 담당 PL(편의시설) | PM, PMO, 행정/전산관리, 기술총괄 | 2026-05-15 | 2026-05-31 | 17 | 0.0 | 0.0 | 30.0 | 30.0 | 0 | 구축 계획서 | 완료 | 완료 |  |
| 33650aa9-577d-8106-9bdd-e363b114c614 | [4.14.1] 나라장터 입찰 공고 낙찰자(업체선정) 계약 업무 진행 및 기술협상 실시 | 4.14.1 | 3 | 서비스 구축 | 나라장터 입찰 공고 낙찰자(업체선정) 계약 업무 진행 및 기술협상 실시 / 기술협상, 제품 규격서, 구축 일정 등 협의 / 착수보고 및 착수자료(WBS, 물품내역서) 취합 | 제일엔지니어링 | 담당 PL(편의시설) | PM, 기술총괄 | 2026-04-01 | 2026-05-15 | 45 | 0.0 | 100 | 100 | 0.0 | 0 | 기술협상 결과 보고서 | 완료 / 2025년 10월 29일 계약 | 완료 |  |
| 33650aa9-577d-816a-aa8a-c2087b70532d | [4.14] 무인매장 | 4.14 | 2 | 서비스 구축 | 무인매장 / 요구사항 정합화→설계→개발/구축→연계→단위/통합 테스트 | 제일엔지니어링 | 담당 PL(편의시설) | 플랫폼/보안 | 2026-04-01 | 2026-08-31 | 153 | 0.0 | 33.0 | 43.0 | 10.0 | 0 | 네트워크 구축 용역 | 진행 중 | 진행중 |  |
| 33650aa9-577d-8183-81b1-fe7233e1fd7c | [4.13.3] 시설 구축 및 관련 플랫폼 데이터 연동 | 4.13.3 | 3 | 서비스 구축 | 시설 구축 및 관련 플랫폼 데이터 연동 / 시설물 구축, WiFi 연동, 관련 인허가 등 / 센서 데이터, CCTV 연동 | 제일엔지니어링 | 담당 PL(편의시설) | PM, PMO, 기술총괄, 감리 | 2026-06-01 | 2026-11-30 | 183 | 0.0 | 80.0 | 50.0 | -30.0 | 0 | 준공도서 | 진행 중 / 계획 수립 | 진행중 |  |
| 33650aa9-577d-81a4-b978-d9d08f7a65cf | [4.13.2] 현장실사 및 현장 여건을 반영한 구축 계획 수립 | 4.13.2 | 3 | 서비스 구축 | 현장실사 및 현장 여건을 반영한 구축 계획 수립 / 납품 물량 입고 계획 수립 / 요구사항 및 실시설계자료 기반 상세 구축 계획 수립 | 제일엔지니어링 | 담당 PL(편의시설) | PM, PMO, 행정/전산관리, 기술총괄 | 2026-05-15 | 2026-05-31 | 17 | 0.0 | 100 | 100 | 0.0 | 0 | 구축 계획서 | 완료 | 완료 |  |
| 33650aa9-577d-8153-b94f-f78703073c50 | [4.13.1] 나라장터 입찰 공고 낙찰자(업체선정) 계약 업무 진행 및 기술협상 실시 | 4.13.1 | 3 | 서비스 구축 | 나라장터 입찰 공고 낙찰자(업체선정) 계약 업무 진행 및 기술협상 실시 / 기술협상, 제품 규격서, 구축 일정 등 협의 / 착수보고 및 착수자료(WBS, 물품내역서) 취합 | 제일엔지니어링 | 담당 PL(편의시설) | PM, 기술총괄 | 2026-04-01 | 2026-05-15 | 45 | 0.0 | 100 | 100 | 0.0 | 0 | 기술협상 결과 보고서 | 완료 / 2025년 10월 29일 계약 | 완료 |  |
| 32050aa9-577d-81e4-b5a8-fe756e58bace | [5.5] 시범운영(Pilot) 및 안정화 | 5.5 | 2 | 통합시험/시범운영 | 시범운영(Pilot) 및 안정화 / 시범운영, 결함 수정, 성과지표(KPI) 초기 측정/리포트 | 제일엔지니어링 | 기술총괄 및 감리 | PM, PMO, 기술총괄, 감리 | 2026-08-01 | 2026-10-31 | 92 | 0.0 | 0.0 | 0.0 | 0.0 | 0 | 성과지표 측정 보고서, 결함조치 보고서 등 | 지연 / 계획 수립 중 | 지연 |  |
| 32050aa9-577d-817a-b6b1-e1c48da8d3b7 | [5.4] 교육·매뉴얼·운영절차 수립 | 5.4 | 2 | 통합시험/시범운영 | 교육·매뉴얼·운영절차 수립 / 운영매뉴얼/사용자 매뉴얼, 교육, 운영조직/권한/모니터링 | 제일엔지니어링 | 기술총괄 및 감리 | PM, PMO, 기술총괄, 감리 | 2026-09-01 | 2026-10-31 | 61 | 0.0 | 0.0 | 0.0 | 0.0 | 0 | 매뉴얼 및 교육계획서 | 지연 / 계획 수립 중 | 지연 |  |
| 32050aa9-577d-8158-853a-d81f10ae505b | [5.3] 데이터 초기구축/검수/이관 | 5.3 | 2 | 통합시험/시범운영 | 데이터 초기구축/검수/이관 / 초기데이터 확보·검수·보완, 데이터 설계 내역서 확정 | 제일엔지니어링 | 기술총괄 및 감리 | PM, PMO, 기술총괄, 감리 | 2026-08-01 | 2026-10-31 | 92 | 0.0 | 0.0 | 0.0 | 0.0 | 0 | 관련 보고서 | 지연 / 계획 수립 중 | 지연 |  |
| 32050aa9-577d-818b-ba0e-f6e4fc00426d | [5.2] 성능/보안 테스트 | 5.2 | 2 | 통합시험/시범운영 | 성능/보안 테스트 / 부하/응답, 취약점 점검, 개인정보/접근통제 점검 | 제일엔지니어링 | 기술총괄 및 감리 | PM, PMO, 기술총괄, 감리 | 2026-08-01 | 2026-10-31 | 92 | 0.0 | 0.0 | 0.0 | 0.0 | 0 | 성능 및 보안 테스트 결과 보고서 | 지연 / 지연 | 지연 |  |
| 31f50aa9-577d-81e5-a6fb-e9448958473d | WBS 자동화 연동 동기화 문제 - Claude |  |  |  |  | 제일엔지니어링 |  |  |  |  | 0 | 0.0 | 0.0 | 0.0 | 0.0 | 0 |  |  | 대기 |  |
| 31b50aa9-577d-8123-ab64-c826b0ea069d | [◆M3] ◆ Milestone: 준공(사업종료) | ◆M3 | 1 | 마일스톤 | ◆ Milestone: 준공(사업종료) / 준공(월 단위: 2025.12) | 제일엔지니어링 | 발주처 |  | 2025-12-31 | 2025-12-31 | 1 | 0.0 | 100 | 0.0 | -100 | 0 | 설계보고서(사업개요/일정) | Not Started / Milestone | 대기 | 8.2 |
| 31b50aa9-577d-8120-ade8-f442325e45c6 | [6.1] 준공서류/성과보고/이관 | 6.1 | 2 | 준공/검수/이관 | 준공서류/성과보고/이관 / 최종 산출물 제출(설계·구축·운영계획), 성과보고서 | 제일엔지니어링 | PM, PMO, 기술총괄, 행정/전산 관리 | PM, PMO, 기술총괄, 감리 | 2026-12-10 | 2026-12-31 | 22 | 0.0 | 100 | 0.0 | -100 | 0 | 이관 계획 및 결과보고서 | 진행 중 | 진행중 | 8.1 |
| 31b50aa9-577d-81d2-9e5e-edfd28a46633 | [6] 준공·검수·인수인계·이관 | 6 | 1 | 준공/검수/이관 | 준공·검수·인수인계·이관 / 준공검사, 최종검수, 성과보고, 인수인계 | 제일엔지니어링 | PMO | 전 분야 | 2025-12-01 | 2025-12-31 | 31 | 3 | 0.0 | 0.0 | 0.0 | 0 | 준공도서 | 진행 중 / 계획 수립 중 | 진행중 | 7.5 |
| 31b50aa9-577d-8160-8ec3-c009a9268ecf | [◆M2] ◆ Milestone: 구축 완료 | ◆M2 | 1 | 마일스톤 | ◆ Milestone: 구축 완료 / 구축 완료(최초 계획): 2025.06) / 기간 연장에 따른 일정 변경 : 2026. 12. 31 | 제일엔지니어링 |  |  | 2026-12-31 | 2026-12-31 | 1 | 0.0 | 100 | 0.0 | -100 | 0 | 구축 완료 보고서, 유지보수 계획서, 준공계 서류 | 지연 / Milestone | 지연 | ◆M2 |
| 31b50aa9-577d-816f-a46c-f7144004473f | [5.1] 통합 테스트(기능/연계) | 5.1 | 2 | 통합시험/시범운영 | 통합 테스트(기능/연계) / 서비스 간 연계 및 데이터 흐름, 장애/복구 시나리오 검증 | 제일엔지니어링 | 기술총괄 및 감리 | PM, PMO, 기술총괄, 감리 | 2026-08-01 | 2026-10-31 | 92 | 0.0 | 0.0 | 0.0 | 0.0 | 0 | 통합 테스트 계획 및 결과 보고서 | 지연 / 계획 수립 | 지연 | 7.3 |
| 31b50aa9-577d-8153-a043-f8250cc8b786 | [5] 통합시험·시범운영·안정화 | 5 | 1 | 통합시험/시범운영 | 통합시험·시범운영·안정화 / 전체 시스템 통합, 성능/보안 검증, 시범운영 및 안정화 | 제일엔지니어링 | 통합QA | 전 서비스 | 2026-08-01 | 2026-10-31 | 92 | 3 | 0.0 | 0.0 | 0.0 | 0 | 설계보고서(사업개요/일정) | Not Started | 대기 | 6.8.5 |
| 31b50aa9-577d-8114-8d55-d0d96d7a4d45 | [4.12.3] 사업성과 검수 및 감리 | 4.12.3 | 3 | 서비스 구축 | 사업성과 검수 및 감리 / 성과물 및 구축사항 검수, 감리보고서, 하자보증계획 | 제일엔지니어링 | PM, 감리 | 플랫폼/데이터 | 2025-01-01 | 2025-03-31 | 90 | 0.0 | 100 | 100 | 0.0 | 0 | 준공도서(도면, 물량산출서 등) | 완료 | 완료 | 6.8.1 |
| 31b50aa9-577d-815e-8e5b-d3332fc0d639 | [4.12.2] 인테리어 상세설계 | 4.12.2 | 3 | 서비스 구축 | 인테리어 상세설계 / 도면,물량산출, 규격 및 시방 확정 | 제일엔지니어링 | 건축설계 및 감리, PM, PMO | 기획/UX | 2024-10-01 | 2025-01-31 | 123 | 0.0 | 100 | 100 | 0.0 | 0 | 인테리어 실시설계 자료 | 완료 | 완료 | 6.8 |
| 31b50aa9-577d-81c1-8aaa-e75d9b0400b0 | [4.12.1] 나라장터 입찰 공고 낙찰자(업체선정) 계약 업무 진행 및 기술협상 실시 | 4.12.1 | 3 | 서비스 구축 | 나라장터 입찰 공고 낙찰자(업체선정) 계약 업무 진행 및 기술협상 실시 / 기술협상, 제품 규격서, 구축 일정 등 협의 / 착수보고 및 착수자료(WBS, 물품내역서) 취합 | 제일엔지니어링 | 건축설계 및 감리, PM, PMO | PM, 감리, 기술총괄 | 2024-10-01 | 2025-01-31 | 123 | 0.0 | 100 | 100 | 0.0 | 0 | 인테리어 실시설계 자료 | 완료 | 완료 | 6.8 |
| 31b50aa9-577d-81ab-a21a-f1e6e45f9e37 | [4.11.3] 플랫폼 개발 진척사항 및 단위테스트 관리 | 4.11.3 | 3 | 서비스 구축 | 플랫폼 개발 진척사항 및 단위테스트 관리 / 개발 진척사항 관리 및 프로젝트 이슈/리스크 관리 | 제일엔지니어링 | 담당 PL:(표준플랫폼) | PM, PMO, 기술총괄, 감리 | 2026-05-15 | 2026-10-31 | 170 | 0.0 | 90.0 | 50.0 | -40.0 | 0 | WBS 기준 공정율 및 프로젝트 이슈/리스크 관리 관련 문서 | 지연 / 계획 수립 | 지연 |  |
| 31b50aa9-577d-8134-a20b-c54ba5da0c66 | [4.11.2] 상세설계(아키텍처,서비스 시나리오, 인터페이스 정의) | 4.11.2 | 3 | 서비스 구축 | 상세설계(아키텍처,서비스 시나리오, 인터페이스 정의) / 요구사항 및 실시설계자료 분석을 통한 상세 모듈 설계, API/데이터 설계, 연계 규격, WBS, 최종 개발 산출물 등 도출 | 제일엔지니어링 | 담당 PL:(표준플랫폼) | PM, PMO, 행정/전산관리, 기술총괄 | 2026-04-15 | 2026-10-31 | 200 | 0.0 | 100 | 100 | 0.0 | 0 | 구축업체 회의록, 정기보고서 및 개발 산출물 일체 | 진행 중 / KAIST와 협의, 요구사항 및 기술사양 보완 중 | 완료 | 6.8.1 |
| 31b50aa9-577d-8129-b3fb-c0c42fb29865 | [4.11.1] 나라장터 입찰 공고 낙찰자(업체선정) 계약 업무 진행 및 기술협상 실시 | 4.11.1 | 3 | 서비스 구축 | 나라장터 입찰 공고 낙찰자(업체선정) 계약 업무 진행 및 기술협상 실시 / 기술협상, 제품 규격서, 구축 일정 등 협의 / 착수보고 및 착수자료(WBS, 물품내역서) 취합 | 제일엔지니어링 | 담당 PL:(표준플랫폼) | PM, 기술총괄 | 2026-04-01 | 2026-04-30 | 30 | 0.0 | 100 | 100 | 0.0 | 0 | 기술협상 결과 보고서 | 진행 중 | 완료 | 6.8 |
| 31b50aa9-577d-813b-a71d-e9bbbcc5b537 | [4.10.3] 플랫폼 개발 진척사항 및 단위테스트 관리 | 4.10.3 | 3 | 서비스 구축 | 플랫폼 개발 진척사항 및 단위테스트 관리 / 개발 진척사항 관리 및 프로젝트 이슈/리스크 관리 | 제일엔지니어링 |  | PM, PMO, 기술총괄, 감리 | 2026-05-15 | 2026-10-31 | 170 | 0.0 | 0.0 | 0.0 | 0.0 | 0 | WBS 기준 공정율 및 프로젝트 이슈/리스크 관리 관련 문서 | 지연 / 계획 수립 | 지연 |  |
| 31b50aa9-577d-819c-8605-f2f1c02fe7d2 | [4.10.2] 상세설계(아키텍처,서비스 시나리오, 인터페이스 정의) | 4.10.2 | 3 | 서비스 구축 | 상세설계(아키텍처,서비스 시나리오, 인터페이스 정의) / 요구사항 및 실시설계자료 분석을 통한 상세 모듈 설계, API/데이터 설계, 연계 규격, WBS, 최종 개발 산출물 등 도출 | 제일엔지니어링 | 담당 PL(메타버스) | PM, PMO, 행정/전산관리, 기술총괄 | 2026-04-15 | 2026-10-31 | 200 | 0.0 | 100 | 100 | 0.0 | 0 | 구축업체 회의록, 정기보고서 및 개발 산출물 일체 | 진행 중 | 완료 | 6.7.1 |
| 31b50aa9-577d-81c8-82a7-f2e848ef30f8 | [4.10.1] 나라장터 입찰 공고 낙찰자(업체선정) 계약 업무 진행 및 기술협상 실시 | 4.10.1 | 3 | 서비스 구축 | 나라장터 입찰 공고 낙찰자(업체선정) 계약 업무 진행 및 기술협상 실시 / 기술협상, 제품 규격서, 구축 일정 등 협의 / 착수보고 및 착수자료(WBS, 물품내역서) 취합 | 제일엔지니어링 | 담당 PL(메타버스) | PM, 기술총괄 | 2026-04-01 | 2026-04-30 | 30 | 0.0 | 100 | 100 | 0.0 | 0 | 기술협상 결과 보고서 | 진행 중 | 완료 | 6.7 |
| 31b50aa9-577d-810c-8cb7-e6b418bfeb94 | [4.9.3] AI시티관제 플랫폼 연계 | 4.9.3 | 3 | 서비스 구축 | AI시티관제 플랫폼 연계 / 보안 인증을 기반으로 AI시티관제 플랫폼 데이터 연계 | 제일엔지니어링 | 담당 PL(DRT) | PM, PMO, 기술총괄, 감리 | 2026-05-01 | 2026-07-31 | 92 | 0.0 | 60.0 | 0.0 | -60.0 | 0 | 데이터 연계 계획 수립 및 관련 보고서 | 지연 / 계획 수립 | 지연 | 6.6.3 |
| 31b50aa9-577d-8108-a5c2-da59c1897a23 | [4.9.2] 현장실사 및 현장 여건을 반영한 구축 계획 수립 | 4.9.2 | 3 | 서비스 구축 | 현장실사 및 현장 여건을 반영한 구축 계획 수립 / 요구사항 및 실시설계자료 기반 상세 구축 계획 수립 / 운수사업자 협의 포함 | 제일엔지니어링 | 담당 PL(DRT) | PM, PMO, 행정/전산관리, 기술총괄 | 2026-04-15 | 2026-04-30 | 16 | 0.0 | 100 | 0.0 | -100 | 0 | 구축 계획서 | 진행 줃 | 진행중 | 6.6.1 |
| 31b50aa9-577d-81e8-87bd-d98e57ba72d0 | [4.9.1] 나라장터 입찰 공고 낙찰자(업체선정) 계약 업무 진행 및 기술협상 실시 | 4.9.1 | 3 | 서비스 구축 | 나라장터 입찰 공고 낙찰자(업체선정) 계약 업무 진행 및 기술협상 실시 / 기술협상, 제품 규격서, 구축 일정 등 협의 / 착수보고 및 착수자료(WBS, 물품내역서) 취합 | 제일엔지니어링 | 담당 PL(DRT) | PM, 기술총괄 | 2026-04-01 | 2026-04-30 | 30 | 0.0 | 100 | 0.0 | -100 | 0 | 기술협상 결과 보고서 | 진행 중 | 진행중 | 6.6 |
| 31b50aa9-577d-81d7-8882-e3b3b6831174 | [4.9] 수요응답형 교통(DRT) | 4.9 | 2 | 서비스 구축 | 수요응답형 교통(DRT) / 요구사항 정합화→설계→개발/구축→연계→단위/통합 테스트 | 제일엔지니어링 | 담당 PL(DRT) | 플랫폼/보안 | 2026-04-01 | 2026-07-31 | 122 | 1 | 87.0 | 0.0 | -87.0 | 0 | 수요응답형교통(DRT) | 진행 중 | 진행중 | 5.2 |
| 31b50aa9-577d-819c-9d4f-de98aadbcd17 | [4.8.3] AI시티관제 플랫폼 연계 | 4.8.3 | 3 | 서비스 구축 | AI시티관제 플랫폼 연계 / 보안 인증을 기반으로 AI시티관제 플랫폼 데이터 연계 | 제일엔지니어링 | 담당 PL(편의시설) | PM, PMO, 기술총괄, 감리 | 2026-05-01 | 2026-10-31 | 184 | 0.0 | 90.0 | 90.0 | 0.0 | 0 | 데이터 연계 계획 수립 및 관련 보고서 | 진행 중 / 계획 수립 | 진행중 | 6.5.3 |
| 31b50aa9-577d-8130-a62b-c9628f267a2d | [4.8.2] 현장실사 및 현장 여건을 반영한 구축 계획 수립 | 4.8.2 | 3 | 서비스 구축 | 현장실사 및 현장 여건을 반영한 구축 계획 수립 / 납품 물량 입고 계획 수립 / 요구사항 및 실시설계자료 기반 상세 구축 계획 수립 | 제일엔지니어링 | 담당 PL(편의시설) | PM, PMO, 행정/전산관리, 기술총괄 | 2025-11-01 | 2025-12-31 | 61 | 0.0 | 100 | 100 | 0.0 | 0 | 구축 계획서 | 완료 | 완료 | 6.5.1 |
| 31b50aa9-577d-81f7-bd43-f86e0835d30b | [4.8.1] 나라장터 입찰 공고 낙찰자(업체선정) 계약 업무 진행 및 기술협상 실시 | 4.8.1 | 3 | 서비스 구축 | 나라장터 입찰 공고 낙찰자(업체선정) 계약 업무 진행 및 기술협상 실시 / 기술협상, 제품 규격서, 구축 일정 등 협의 / 착수보고 및 착수자료(WBS, 물품내역서) 취합 | 제일엔지니어링 | 담당 PL(편의시설) | PM, 기술총괄 | 2025-08-01 | 2025-10-20 | 81 | 0.0 | 100 | 100 | 0.0 | 0 | 기술협상 결과 보고서 | 완료 / 2025년 10월 29일 계약 | 완료 | 6.5 |
| 31b50aa9-577d-8135-91f9-f52543a59d05 | [4.8] 유무선 네트워크 구축(공공WiFi/네트워크 구축 등) | 4.8 | 2 | 서비스 구축 | 유무선 네트워크 구축(공공WiFi/네트워크 구축 등) / 요구사항 정합화→설계→개발/구축→연계→단위/통합 테스트 | 제일엔지니어링 | 담당 PL(편의시설) | 플랫폼/보안 | 2025-08-01 | 2026-07-31 | 365 | 1 | 97.0 | 97.0 | 0.0 | 0 | 네트워크 구축 용역 | 진행 중 | 진행중 | 5.2 |
| 31b50aa9-577d-815e-9a82-d9f853d9ea82 | [4.7.4] 충남광역데이터 허브 연계 | 4.7.4 | 3 | 서비스 구축 | 충남광역데이터 허브 연계 / 개발/테스트/시범운영간 유효 데이터를 도출하고 충남광역데이터 허브와 데이터 연계 | 제일엔지니어링 | 담당PL(OIM) | PM, PMO, 기술총괄, 감리 | 2026-01-01 | 2026-11-30 | 334 | 0.0 | 90.0 | 50.0 | -40.0 | 0 | 연계데이터 확정, 인터페이스 정의서 등 / 선정사 데이터 연계 계획서 | 운영간 실효성 있는 데이터 생성 연계 | 진행중 |  |
| 31b50aa9-577d-812f-8a25-dee13482ff79 | [4.7.3] 플랫폼 개발 진척사항 및 단위테스트 관리 | 4.7.3 | 3 | 서비스 구축 | 플랫폼 개발 진척사항 및 단위테스트 관리 / 개발 진척사항 관리 및 프로젝트 이슈/리스크 관리 | 제일엔지니어링 | 담당PL(OIM) | PM, PMO, 기술총괄, 감리 | 2026-01-01 | 2026-11-30 | 334 | 0.0 | 90.0 | 90.0 | 0.0 | 0 | WBS 기준 공정율 및 프로젝트 이슈/리스크 관리 관련 문서 | 진행 중 / 테스트 계획 수립 중 | 진행중 | 5.2 |
| 31b50aa9-577d-81d4-a7ee-e737d0b3602c | [4.7.2] 상세설계(아키텍처,서비스 시나리오, 인터페이스 정의) | 4.7.2 | 3 | 서비스 구축 | 상세설계(아키텍처,서비스 시나리오, 인터페이스 정의) / 요구사항 및 실시설계자료 분석을 통한 상세 모듈 설계, API/데이터 설계, 연계 규격, WBS, 최종 개발 산출물 등 도출 | 제일엔지니어링 | 담당PL(OIM) | PM, PMO, 기술총괄, 감리 | 2026-01-01 | 2026-03-31 | 90 | 0.0 | 100 | 100 | 0.0 | 0 | 구축업체 회의록, 정기보고서 및 개발 산출물 일체 | 진행 중 | 완료 | 5.1 |
| 31b50aa9-577d-8164-9dd7-c8cd02a270dd | [4.7.1] 나라장터 입찰 공고 낙찰자(업체선정) 계약 업무 진행 및 기술협상 실시 | 4.7.1 | 3 | 서비스 구축 | 나라장터 입찰 공고 낙찰자(업체선정) 계약 업무 진행 및 기술협상 실시 / 기술협상, 제품 규격서, 구축 일정 등 협의 / 착수보고 및 착수자료(WBS, 물품내역서) 취합 | 제일엔지니어링 | 담당PL(OIM) | PMO, 기술총괄 | 2025-11-07 | 2025-12-16 | 40 | 0.0 | 100 | 100 | 0.0 | 0 | 기술협상 결과 보고서 | 완료 | 완료 | 4.2 |
| 31b50aa9-577d-81fb-a385-d82996ee7bc6 | [4.7] 데이터 허브·정보관리 서비스(OIM) | 4.7 | 2 | 서비스 구축 | 데이터 허브·정보관리 서비스(OIM) / 데이터 수집/코어/분석, API 게이트웨이, 포털/마켓플레이스 | 제일엔지니어링 |  |  | 2025-11-07 | 2026-07-31 | 267 | 1.5 | 95.0 | 85.0 | -10.0 | 0 | 요구사항: 정보관리(OIM) |  | 진행중 | 4.2 |
| 31b50aa9-577d-816f-815b-ee358fe8032c | [4.6.6] HW 플랫폼 설치 및 테스트 관리 | 4.6.6 | 3 | 서비스 구축 | HW 플랫폼 설치 및 테스트 관리 / 구축 진척사항 관리 | 제일엔지니어링 | 기술총괄 | PMO, 기술총괄 | 2026-04-01 | 2026-07-31 | 122 | 0.0 | 100 | 100 | 0.0 | 0 | 구축 WBS 기반 공정률, 결합 조치 보고서 등 | 테스트 계획 수립 중 | 완료 |  |
| 31b50aa9-577d-810f-818f-ed46fdd26700 | [4.6.5] 보안 솔루션/망연계 적용 | 4.6.5 | 3 | 서비스 구축 | 보안 솔루션/망연계 적용 / 방화벽/IPS/WAF/DB암호화/서버보안/모바일보안/망연계 | 제일엔지니어링 | 기술총괄 | PMO, 기술총괄 | 2026-04-01 | 2026-07-31 | 122 | 0.0 | 100 | 90.0 | -10.0 | 0 | 운영 편의성을 고려한 UX 반영 협의, / 운영 매뉴얼 등 | 진행 중 / 9/29 매뉴얼 작성 전 | 진행중 | 4.2 |
| 31b50aa9-577d-81f4-b460-c1e05303df67 | [4.6.4] VDI/운영포털(CMP) 구축 | 4.6.4 | 3 | 서비스 구축 | VDI/운영포털(CMP) 구축 / VDI 서버/소프트웨어, 클라우드 관리 포털 구성 | 제일엔지니어링 | 기술총괄 | PMO, 기술총괄 | 2026-04-01 | 2026-07-31 | 122 | 0.0 | 100 | 100 | 0.0 | 0 | 운영 편의성을 고려한 UX 반영 협의, / 운영 매뉴얼 등 | 진행 중 | 완료 | 4.2 |
| 31b50aa9-577d-8195-9e90-e2706adfa216 | [4.6.3] SDDC 코어 구축(컴퓨팅/네트워크/스토리지) | 4.6.3 | 3 | 서비스 구축 | SDDC 코어 구축(컴퓨팅/네트워크/스토리지) / SDDC 서버·ToR/백본·스토리지 구성, 관리 플랫폼 구성 | 제일엔지니어링 | 기술총괄 | PMO, 기술총괄 | 2026-04-01 | 2026-07-31 | 122 | 0.0 | 100 | 100 | 0.0 | 0 | 납품확인서, 기술지원 확약서, 선정업체 협의 회의록, 최종 관련 보고서 | 완료 | 완료 | 4.1 |
| 31b50aa9-577d-81ac-b82c-eae2426f5509 | [4.6.2] 분리망(보안망·서비스망) 설계/구현 | 4.6.2 | 3 | 서비스 구축 | 분리망(보안망·서비스망) 설계/구현 / 실시설계 기반 보안망/서비스망 분리 구성 및 정책 최종 확정 | 제일엔지니어링 | 기술총괄 | PMO, 기술총괄 | 2026-01-01 | 2026-03-31 | 90 | 0.0 | 100 | 100 | 0.0 | 0 | SDDC IT 인프라 설계보고서를 기반으로 한 선정업체 협의 회의록, 최종 관련 보고서 | 완료 | 완료 | 3.2 |
| 31b50aa9-577d-810a-b956-d07bafc08835 | [4.6.1] 나라장터 입찰 공고 낙찰자(업체선정) 계약 업무 진행 및 기술협상 실시 | 4.6.1 | 3 | 서비스 구축 | 나라장터 입찰 공고 낙찰자(업체선정) 계약 업무 진행 및 기술협상 실시 / 기술협상, 제품 규격서, 구축 일정 등 협의 / 착수보고 및 착수자료(WBS, 물품내역서) 취합 | 제일엔지니어링 | PM, PMO, 기술총괄 | PMO, 기술총괄 | 2025-11-07 | 2025-12-16 | 40 | 0.0 | 100 | 100 | 0.0 | 0 | 기술협상 결과 보고서 | 완료 / 2025년 12월 18일 계약 완료 | 완료 | 3.2 |
| 31b50aa9-577d-8106-81b2-f9a320ea9ca5 | [4.6] 기반 인프라 구축(SDDC/보안/네트워크) | 4.6 | 2 | 서비스 구축 | 기반 인프라 구축(SDDC/보안/네트워크) / SDDC 서버/스토리지/스위치/VDI/보안솔루션/망연계 구축 | 제일엔지니어링 |  | 보안 | 2024-08-01 | 2025-12-31 | 518 | 2 | 100 | 98.0 | -2.0 | 0 | 요구사항: SDDC IT 인프라(SDC) |  | 진행중 | 3.2 |
| 31b50aa9-577d-81b2-8b02-f29decbf960c | [4.5.3] 플랫폼 개발 진척사항 및 단위테스트 관리 | 4.5.3 | 3 | 서비스 구축 | 플랫폼 개발 진척사항 및 단위테스트 관리 / 개발 진척사항 관리 및 프로젝트 이슈/리스크 관리 | 제일엔지니어링 | 담당PL(BIS) | PM, PMO, 기술총괄, 감리 | 2026-01-01 | 2026-11-30 | 334 | 0.0 | 90.0 | 90.0 | 0.0 | 0 | WBS 기준 공정율 및 프로젝트 이슈/리스크 관리 관련 문서 | 진행 중 / 테스트 계획 수립 중 | 진행중 | 6.4.3 |
| 31b50aa9-577d-81ae-81c7-de67b80b025a | [4.5.2] 상세설계(아키텍처,서비스 시나리오, 인터페이스 정의) | 4.5.2 | 3 | 서비스 구축 | 상세설계(아키텍처,서비스 시나리오, 인터페이스 정의) / 요구사항 및 실시설계자료 분석을 통한 상세 모듈 설계, API/데이터 설계, 연계 규격, WBS, 최종 개발 산출물 등 도출 | 제일엔지니어링 | 담당PL(BIS) | PM, PMO, 행정/전산관리, 기술총괄 | 2026-01-01 | 2026-11-30 | 334 | 0.0 | 100 | 100 | 0.0 | 0 | 구축업체 회의록, 정기보고서 및 개발 산출물 일체 | 진행 중 | 완료 | 6.4.1 |
| 31b50aa9-577d-81ce-b02a-ee166c2fa137 | [4.5.1] 나라장터 입찰 공고 낙찰자(업체선정) 계약 업무 진행 및 기술협상 실시 | 4.5.1 | 3 | 서비스 구축 | 나라장터 입찰 공고 낙찰자(업체선정) 계약 업무 진행 및 기술협상 실시 / 기술협상, 제품 규격서, 구축 일정 등 협의 / 착수보고 및 착수자료(WBS, 물품내역서) 취합 | 제일엔지니어링 | 담당PL(BIS) | PM, 기술총괄 | 2025-11-07 | 2025-12-16 | 40 | 0.0 | 100 | 100 | 0.0 | 0 | 기술협상 결과 보고서 | 완료 / 1차 : KT컨소 계약해지 / 최종 : 한국정보기술 컨소 선정 | 완료 | 6.4 |
| 31b50aa9-577d-81e7-9cd8-d7b3d136a7ae | [4.5] AI융복합 서비스 플랫폼 | 4.5 | 2 | 서비스 구축 | AI융복합 서비스 플랫폼 / 요구사항 정합화→설계→개발/구축→연계→단위/통합 테스트 | 제일엔지니어링 |  |  | 2025-11-07 | 2026-07-31 | 267 | 1 | 97.0 | 97.0 | 0.0 | 0 | 요구사항: 비즈니스 인큐베이팅(BIS) | 진행 중 | 진행중 | 5.2 |
| 31b50aa9-577d-8177-bff4-c1eb9c8f703c | [4.4.3] 플랫폼 개발 진척사항 및 단위테스트 관리 | 4.4.3 | 3 | 서비스 구축 | 플랫폼 개발 진척사항 및 단위테스트 관리 / 개발 진척사항 관리 및 프로젝트 이슈/리스크 관리 | 제일엔지니어링 | 담당PL(ACP) | PM, PMO, 기술총괄, 감리 | 2026-01-01 | 2026-11-30 | 334 | 0.0 | 90.0 | 90.0 | 0.0 | 0 | WBS 기준 공정율 및 프로젝트 이슈/리스크 관리 관련 문서 | 진행 중 / 테스트 계획 수립 중 | 진행중 | 6.3.3 |
| 31b50aa9-577d-8180-9379-cf0d91483a00 | [4.4.2] 상세설계(아키텍처,서비스 시나리오, 인터페이스 정의) | 4.4.2 | 3 | 서비스 구축 | 상세설계(아키텍처,서비스 시나리오, 인터페이스 정의) / 요구사항 및 실시설계자료 분석을 통한 상세 모듈 설계, API/데이터 설계, 연계 규격, WBS, 최종 개발 산출물 등 도출 | 제일엔지니어링 | 담당PL(ACP) | PM, PMO, 행정/전산관리, 기술총괄 | 2026-01-01 | 2026-11-30 | 334 | 0.0 | 100 | 100 | 0.0 | 0 | 구축업체 회의록, 정기보고서 및 개발 산출물 일체 | 진행 중 | 완료 | 6.3.1 |
| 31b50aa9-577d-81bd-8a50-edfa188ae44b | [4.4.1] 나라장터 입찰 공고 낙찰자(업체선정) 계약 업무 진행 및 기술협상 실시 | 4.4.1 | 3 | 서비스 구축 | 나라장터 입찰 공고 낙찰자(업체선정) 계약 업무 진행 및 기술협상 실시 / 기술협상, 제품 규격서, 구축 일정 등 협의 / 착수보고 및 착수자료(WBS, 물품내역서) 취합 | 제일엔지니어링 | 담당PL(ACP) | PM, 기술총괄 | 2025-11-07 | 2025-12-16 | 40 | 0.0 | 100 | 100 | 0.0 | 0 | 기술협상 결과 보고서 | 완료 / 1차 : KT컨소 계약해지 / 최종 : 한국정보기술 컨소 선정 | 완료 | 6.3 |
| 31b50aa9-577d-81e5-9f47-d1b9a81b24c0 | [4.4] AI 시티관제 플랫폼(ACP) | 4.4 | 2 | 서비스 구축 | AI 시티관제 플랫폼(ACP) / 요구사항 정합화→설계→개발/구축→연계→단위/통합 테스트 | 제일엔지니어링 | 담당PL(ACP) | 플랫폼/보안 | 2025-11-07 | 2026-07-31 | 267 | 1.5 | 97.0 | 97.0 | 0.0 | 0 | 요구사항: AI 시티관제(ACP) | 진행 중 | 진행중 | 5.2 |
| 31b50aa9-577d-8192-9b9d-d3e1d7117619 | [4.3.3] 플랫폼 개발 진척사항 및 단위테스트 관리 | 4.3.3 | 3 | 서비스 구축 | 플랫폼 개발 진척사항 및 단위테스트 관리 / 개발 진척사항 관리 | 제일엔지니어링 | 담당PL(ECC) | PM, PMO, 기술총괄, 감리 | 2026-01-01 | 2026-11-30 | 334 | 0.0 | 90.0 | 90.0 | 0.0 | 0 | WBS 기준 공정율 및 프로젝트 이슈/리스크 관리 관련 문서 | 진행 중 / 테스트 계획 수립 중 | 진행중 | 6.2.3 |
| 31b50aa9-577d-812e-86cd-cda8e15b49a1 | [4.3.2] 상세설계(아키텍처,서비스 시나리오, 인터페이스 정의) | 4.3.2 | 3 | 서비스 구축 | 상세설계(아키텍처,서비스 시나리오, 인터페이스 정의) / 요구사항 및 실시설계자료 분석을 통한 상세 모듈 설계, API/데이터 설계, 연계 규격, 최종 개발 산출물 도출 | 제일엔지니어링 | 담당PL(ECC) | PM, PMO, 행정/전산관리, 기술총괄 | 2026-01-01 | 2026-11-30 | 334 | 0.0 | 100 | 100 | 0.0 | 0 | 구축업체 회의록, 정기보고서 및 개발 산출물 일체 | 진행 중 | 완료 | 6.2.1 |
| 31b50aa9-577d-810f-a3bb-eb0529d9040e | [4.3.1] 나라장터 입찰 공고 낙찰자(업체선정) 계약 업무 진행 및 기술협상 실시 | 4.3.1 | 3 | 서비스 구축 | 나라장터 입찰 공고 낙찰자(업체선정) 계약 업무 진행 및 기술협상 실시 / 기술협상, 제품 규격서, 구축 일정 등 협의 / 착수보고 및 착수자료(WBS, 물품내역서) 취합 | 제일엔지니어링 | 담당PL(ECC) | PM, 기술총괄 | 2025-11-07 | 2025-12-16 | 40 | 0.0 | 100 | 100 | 0.0 | 0 | 기술협상 결과 보고서 | 완료 / 1차 : KT컨소 계약해지 / 최종 : 한국정보기술 컨소 선정 | 완료 | 6.2 |
| 31b50aa9-577d-8178-83a3-e4dcb471f735 | [4.3] 모바일 전자시민증(ECC) | 4.3 | 2 | 서비스 구축 | 모바일 전자시민증(ECC) / 요구사항 정합화→설계→개발/구축→연계→단위/통합 테스트 | 제일엔지니어링 | 담당PL(ECC) | 플랫폼/보안 | 2025-11-07 | 2026-07-31 | 267 | 1 | 97.0 | 97.0 | 0.0 | 0 | 모바일 전자시민증(ECC) | 진행 중 | 진행중 | 5.2 |
| 31b50aa9-577d-81f1-ad28-c8a6fda8a45c | [4.2.3] 플랫폼 개발 진척사항 및 단위테스트 관리 | 4.2.3 | 3 | 서비스 구축 | 플랫폼 개발 진척사항 및 단위테스트 관리 / 개발 진척사항 관리 및 프로젝트 이슈/리스크 관리 | 제일엔지니어링 | PM, PMO, 감리, 기술총괄 | PM, PMO, 기술총괄, 감리 | 2026-01-01 | 2026-11-30 | 334 | 0.0 | 90.0 | 90.0 | 0.0 | 0 | WBS 기준 공정율 및 프로젝트 이슈/리스크 관리 관련 문서 | 2025.12 구축 업체 선정, 기간 연장 후 본격 진행 / -9/29 기간 연장 검토 중 | 진행중 |  |
| 31b50aa9-577d-81ad-bde9-dc6255acbf7c | [4.2.2] 선정사와 협의를 통한 상세설계(아키텍처,서비스 시나리오, 인터페이스 정의) | 4.2.2 | 3 | 서비스 구축 | 선정사와 협의를 통한 상세설계(아키텍처,서비스 시나리오, 인터페이스 정의) / 요구사항 및 실시설계자료 분석을 통한 상세 모듈 설계, API/데이터 설계, 연계 규격, WBS, 최종 개발 산출물 등 도출 | 제일엔지니어링 | 담당 PL(NOP) | PM, PMO, 행정/전산관리, 기술총괄 | 2026-01-01 | 2026-04-30 | 120 | 0.0 | 100 | 100 | 0.0 | 0 | 구축업체 회의록, 정기보고서 및 개발 산출물 일체 | 지연 / 구축업체 선정 및 실시설계자료 검토 중 / -9/29 기간 연장 검토 중 | 완료 | 6.1.1 |
| 31b50aa9-577d-8199-b28c-c5c4c4e04225 | [4.2.1] 나라장터 입찰 공고 낙찰자(업체선정) 계약 업무 진행 및 기술협상 실시, 계약 | 4.2.1 | 3 | 서비스 구축 | 나라장터 입찰 공고 낙찰자(업체선정) 계약 업무 진행 및 기술협상 실시, 계약 / 기술협상, 제품 규격서, 구축 일정 등 협의 / 착수보고 및 착수자료(WBS, 물품내역서) 취합 | 제일엔지니어링 | 담당 PL(NOP) | PM, 기술총괄 | 2025-11-07 | 2025-12-16 | 40 | 0.0 | 100 | 100 | 0.0 | 0 | 기술협상 결과 보고서 | 완료 / 2025년 12월 18일 계약 완료 | 완료 | 6.1 |

| id | name | wbsId | level | category | subCategory | organization | manager | collaborator | startDate | endDate | duration | weight | plannedRate | actualRate | deviation | budget | deliverable | note | status | predecessor |
| --- | --- | --- | --- | --- | --- | --- | --- | --- | --- | --- | --- | --- | --- | --- | --- | --- | --- | --- | --- | --- |
| 31b50aa9-577d-81c1-87cb-f5768f9c58a6 | [4.2] 디지털 OASIS 접수/운영/거래 서비스(NOP) | 4.2 | 2 | 서비스 구축 | 디지털 OASIS 접수/운영/거래 서비스(NOP) / 요구사항 정합화→설계→개발/구축→연계→단위/통합 테스트 | 제일엔지니어링 | 담당 PL(NOP) |  | 2025-11-07 | 2026-07-31 | 267 | 1.5 | 97.0 | 97.0 | 0.0 | 0 | 디지털 OASIS 접수/운영/거래(NOP) | 진행 중 | 진행중 | 5.2 |
| 31b50aa9-577d-8113-bf60-c2f4c132b2c3 | [4.1] 메타버스 플랫폼 | 4.1 | 2 | 서비스 구축 | 메타버스 플랫폼 / 요구사항 정합화→설계→개발/구축→연계→단위/통합 테스트 | 제일엔지니어링 | 담당 PL(메타버스) | 플랫폼/보안 | 2026-04-01 | 2026-08-31 | 153 | 1 | 67.0 | 67.0 | 0.0 | 0 | 메타버스 플랫폼 | 진행 중 | 진행중 | 5.2 |
| 31b50aa9-577d-8157-a379-cfec1e55bd5f | [4] 서비스 구축(앱/웹/플랫폼) 구축 | 4 | 1 | 요구사항 정의서 및 제안요청서 작성 | 서비스 구축(앱/웹/플랫폼) 구축 / 각 서비스별 개발·구축·요구사항 추적 | Mon Mar 16 2026 16:00:00 GMT+0900 (Korean Standard Time) | Thu Apr 30 2026 16:00:00 GMT+0900 (Korean Standard Time) |  | 2024-01-01 | 2025-12-31 | 731 | 63 | 87.0 | 79.0 | -8.0 | 0 | 구축업체 협의 자료(회의록, 최종 설계문서 등) 및 WBS | PM, PMO, 기술총괄 | 진행중 |  |
| 31b50aa9-577d-816e-8172-f1cd415178a4 | [3.3] 사전 규격 공고 질의응답/제안평가 지원 | 3.3 | 2 | 나라장터 발주 지원 | 사전 규격 공고 질의응답/제안평가 지원 / 입찰 Q&A, 평가 기준/위원회 지원(해당 시) | 제일엔지니어링 | 나라장터 입찰공고 | 제일엔지니어링 / PM, PMO, 기술총괄 | 2025-01-01 | 2026-04-30 | 485 | 0.0 | 100 | 100 | 0.0 | 0 | 분기보고서, 나라장터 질의응답 대응이력 | 완료 | 완료 | 3.2 |
| 31b50aa9-577d-819e-b6cd-ca77ab9e177a | [3.2.4.7] 메타버스 플랫폼 | 3.2.4.7 | 3 | 나라장터 발주 지원 | 메타버스 플랫폼 / 요구사항 정의서 및 제안요청서 작성 | 제일엔지니어링 | PM, PMO, 기술총괄 | 건축설계 | 2026-03-16 | 2026-04-30 | 46 | 0.0 | 100 | 100 | 0.0 | 0 | 나라장터 공고 이력 |  | 완료 |  |
| 31b50aa9-577d-815e-9241-e8ab91f866ed | [3.2.4.6] SDDC기반 IT 인프라 구축 | 3.2.4.6 | 3 | 나라장터 발주 지원 | SDDC기반 IT 인프라 구축 / 서비스 인프라 구축 용역사업으로 통합하여 나라장터를 통해 사업발주 | 제일엔지니어링 | PM, PMO, 기술총괄 |  | 2025-08-28 | 2025-10-20 | 54 | 0.0 | 100 | 100 | 0.0 | 0 | 나라장터 공고 이력 | 24년 입찰은 KT 계약 후 하도급법 위반에 따라 계약해지함 / 25년 재공고를 통해 한국정보기술 컨소시엄 선정 | 완료 |  |
| 31b50aa9-577d-814f-8be0-fbbf7523cd44 | [3.2.4.5] AI융복합 서비스 플랫폼 | 3.2.4.5 | 3 | 나라장터 발주 지원 | AI융복합 서비스 플랫폼 / 서비스 인프라 구축 용역사업으로 통합하여 나라장터를 통해 사업발주 | 제일엔지니어링 | PM, PMO, 기술총괄 |  | 2025-08-28 | 2025-10-20 | 54 | 0.0 | 100 | 100 | 0.0 | 0 | 나라장터 공고 이력 | 24년 입찰은 KT 계약 후 하도급법 위반에 따라 계약해지함 / 25년 재공고를 통해 한국정보기술 컨소시엄 선정 | 완료 |  |
| 31b50aa9-577d-8119-b9b4-df643ca93e9f | [3.2.4.4] 이노베이션 센터 조경시설 구축 | 3.2.4.4 | 3 | 나라장터 발주 지원 | 이노베이션 센터 조경시설 구축 / 수의계약(나라장터 조달 구매) | 제일엔지니어링 | 건축설계 | PM, PMO, 기술총괄 | 2025-03-27 | 2025-04-10 | 15 | 0.0 | 100 | 100 | 0.0 | 0 | 나라장터 공고 이력 |  | 완료 |  |
| 31b50aa9-577d-8129-98f3-f7adc4aa2d1a | [3.2.4.3] 이노베이션 센터 음향시설 구축 | 3.2.4.3 | 3 | 나라장터 발주 지원 | 이노베이션 센터 음향시설 구축 / 수의계약(나라장터 조달 구매) | 제일엔지니어링 | 건축설계 | PM, PMO, 기술총괄 | 2025-03-18 | 2025-03-19 | 2 | 0.0 | 100 | 100 | 0.0 | 0 | 나라장터 공고 이력 |  | 완료 |  |
| 31b50aa9-577d-81d9-b697-f7f886cd6f66 | [3.2.4.2] 이노베이션 센터 기자재 구매 및 구축 용역 | 3.2.4.2 | 3 | 나라장터 발주 지원 | 이노베이션 센터 기자재 구매 및 구축 용역 / 요구사항 정의서 및 제안요청서 작성 | 제일엔지니어링 | 건축설계 | PM, PMO, 기술총괄 | 2025-06-02 | 2025-06-13 | 12 | 0.0 | 100 | 100 | 0.0 | 0 | 나라장터 공고 이력 |  | 완료 |  |
| 31b50aa9-577d-8140-a7bd-c2d2c70bb171 | [3.2.4.1] 이노베이션 센터 인테리어 실시설계 및 시공 용역 | 3.2.4.1 | 3 | 나라장터 발주 지원 | 이노베이션 센터 인테리어 실시설계 및 시공 용역 / 요구사항 정의서 및 제안요청서 작성 | 제일엔지니어링 | 건축설계 | PM, PMO, 기술총괄 | 2024-10-08 | 2024-10-14 | 7 | 0.0 | 100 | 100 | 0.0 | 0 | 나라장터 공고 이력 |  | 완료 |  |
| 31b50aa9-577d-8101-82a9-ded6f85200e1 | [3.2.4] 비즈니스 인큐베이팅 서비스 | 3.2.4 | 3 | 나라장터 발주 지원 | 비즈니스 인큐베이팅 서비스 / 서비스 인프라 구축 용역사업으로 통합하여 나라장터를 통해 사업발주 | 제일엔지니어링 | PM, PMO, 기술총괄 |  | 2024-10-08 | 2026-04-30 | 570 | 0.0 | 100 | 100 | 0.0 | 0 | 나라장터 공고 이력 |  | 완료 |  |
| 31b50aa9-577d-81e4-b65d-ff4e2057b44c | [3.2.3.2] 시설물 위치기반 표준 서비스 플랫폼 | 3.2.3.2 | 3 | 나라장터 발주 지원 | 시설물 위치기반 표준 서비스 플랫폼 / 서비스 인프라 구축 용역사업으로 통합하여 나라장터를 통해 사업발주 | 제일엔지니어링 | PM, PMO, 기술총괄 | 건축설계 | 2026-03-16 | 2026-04-30 | 46 | 0.0 | 100 | 100 | 0.0 | 0 | 나라장터 공고 이력 |  | 완료 |  |
| 31b50aa9-577d-81e5-b155-c822fb418031 | [3.2.3.1] 정보관리 서비스 | 3.2.3.1 | 3 | 나라장터 발주 지원 | 정보관리 서비스 / 서비스 인프라 구축 용역사업으로 통합하여 나라장터를 통해 사업발주 | 제일엔지니어링 | PM, PMO, 기술총괄 |  | 2025-08-28 | 2025-10-20 | 54 | 0.0 | 100 | 100 | 0.0 | 0 | 나라장터 공고 이력 | 24년 입찰은 KT 계약 후 하도급법 위반에 따라 계약해지함 / 25년 재공고를 통해 한국정보기술 컨소시엄 선정 | 완료 |  |
| 31b50aa9-577d-818a-84aa-f368409f65db | [3.2.3] 디지털 OASIS 정보관리 서비스 | 3.2.3 | 3 | 나라장터 발주 지원 | 디지털 OASIS 정보관리 서비스 / 서비스 인프라 구축 용역사업으로 통합하여 나라장터를 통해 사업발주 | 제일엔지니어링 | PM, PMO, 기술총괄 |  | 2025-08-28 | 2026-04-30 | 246 | 0.0 | 100 | 100 | 0.0 | 0 | 나라장터 공고 이력 |  | 완료 |  |
| 31b50aa9-577d-812a-83e7-e676db6ea8d3 | [3.2.2.1] AI통합관제 플랫폼 | 3.2.2.1 | 3 | 나라장터 발주 지원 | AI통합관제 플랫폼 / 서비스 인프라 구축 용역사업으로 통합하여 나라장터를 통해 사업발주 | 제일엔지니어링 | PM, PMO, 기술총괄 |  | 2025-08-28 | 2025-10-20 | 54 | 0.0 | 100 | 100 | 0.0 | 0 | 나라장터 공고 이력 | 24년 입찰은 KT 계약 후 하도급법 위반에 따라 계약해지함 / 25년 재공고를 통해 한국정보기술 컨소시엄 선정 | 완료 |  |
| 31b50aa9-577d-8190-8b3f-d1e937a08ec8 | [3.2.2] 디지털 OASIS 운영자 서비스 | 3.2.2 | 3 | 나라장터 발주 지원 | 디지털 OASIS 운영자 서비스 / 서비스 인프라 구축 용역사업으로 통합하여 나라장터를 통해 사업발주 | 제일엔지니어링 | PM, PMO, 기술총괄 |  | 2025-08-28 | 2025-10-20 | 54 | 0.0 | 100 | 100 | 0.0 | 0 | 나라장터 공고 이력 |  | 완료 |  |
| 31b50aa9-577d-81e3-990b-f1844de1af33 | [3.2.1.8] 네트워크 구축 | 3.2.1.8 | 3 | 나라장터 발주 지원 | 네트워크 구축 / 요구사항 정의서 및 제안요청서 작성 | 제일엔지니어링 | PM, PMO, 기술총괄 |  | 2025-08-05 | 2025-08-22 | 18 | 0.0 | 100 | 100 | 0.0 | 0 | 나라장터 공고 이력 |  | 완료 |  |
| 31b50aa9-577d-81fc-a1cd-c637f4f529df | [3.2.1.7] 스마트공공WiFi | 3.2.1.7 | 3 | 나라장터 발주 지원 | 스마트공공WiFi / 요구사항 정의서 및 제안요청서 작성 | 제일엔지니어링 | PM, PMO, 기술총괄 |  | 2025-08-05 | 2025-08-22 | 18 | 0.0 | 100 | 100 | 0.0 | 0 | 나라장터 공고 이력 |  | 완료 |  |
| 31b50aa9-577d-816f-86fe-d58edfa19903 | [3.2.1.6] 무인매장 | 3.2.1.6 | 3 | 나라장터 발주 지원 | 무인매장 / 요구사항 정의서 및 제안요청서 작성 | 제일엔지니어링 | PM, PMO, 기술총괄 | 건축설계 | 2026-03-16 | 2026-04-30 | 46 | 0.0 | 100 | 100 | 0.0 | 0 | 나라장터 공고 이력 |  | 완료 |  |
| 31b50aa9-577d-8123-9396-cf5103a8c362 | [3.2.1.5] 스마트폴&디스플레이 | 3.2.1.5 | 3 | 나라장터 발주 지원 | 스마트폴&디스플레이 / 요구사항 정의서 및 제안요청서 작성 | 제일엔지니어링 | PM, PMO, 기술총괄 | 건축설계 | 2026-03-16 | 2026-04-30 | 46 | 0.0 | 100 | 100 | 0.0 | 0 | 나라장터 공고 이력 |  | 완료 |  |
| 31b50aa9-577d-8179-af36-e335b80b18c9 | [3.2.1.4] 수요응답형 모빌리티 DRT 서비스 | 3.2.1.4 | 3 | 나라장터 발주 지원 | 수요응답형 모빌리티 DRT 서비스 / 요구사항 정의서 및 제안요청서 작성 | 제일엔지니어링 | PM, PMO, 기술총괄 | 건축설계 | 2026-03-16 | 2026-04-30 | 46 | 0.0 | 100 | 20.0 | -80.0 | 0 | 나라장터 공고 이력 | 사업초기부터 요구사항 정의 진행 함(게획 공정률 100% 사유) / 지연 사유는 운수사업자 민원 발생 소지가 있는 사업으로 지방선거 이후로 진행 예정임 | 지연 |  |
| 31b50aa9-577d-81b2-8bd7-cb8387bdfc3f | [3.2.1.3] 전자시민증 | 3.2.1.3 | 3 | 나라장터 발주 지원 | 전자시민증 / 서비스 인프라 구축 용역사업으로 통합하여 나라장터를 통해 사업발주 | 제일엔지니어링 | PM, PMO, 기술총괄 |  | 2025-08-28 | 2025-10-20 | 54 | 0.0 | 100 | 100 | 0.0 | 0 | 나라장터 공고 이력 | 24년 입찰은 KT 계약 후 하도급법 위반에 따라 계약해지함 / 25년 재공고를 통해 한국정보기술 컨소시엄 선정 | 완료 |  |
| 31b50aa9-577d-814f-bb0b-ff133ae9c9ee | [3.2.1.2] 디지털 노마드 접수/운영/거래 | 3.2.1.2 | 3 | 나라장터 발주 지원 | 디지털 노마드 접수/운영/거래 / 서비스 인프라 구축 용역사업으로 통합하여 나라장터를 통해 사업발주 | 제일엔지니어링 | PM, PMO, 기술총괄 |  | 2025-08-28 | 2025-10-20 | 54 | 0.0 | 100 | 100 | 0.0 | 0 | 나라장터 공고 이력 | 24년 입찰은 KT 계약 후 하도급법 위반에 따라 계약해지함 / 25년 재공고를 통해 한국정보기술 컨소시엄 선정 | 완료 |  |
| 31b50aa9-577d-8135-8553-c57f09d3a39b | [3.2.1.1] 디지털 OASIS SPOT 구축 용역 | 3.2.1.1 | 3 | 나라장터 발주 지원 | 디지털 OASIS SPOT 구축 용역 / 토목, 이동형 트레일러 구축 요구사항 및 입찰 참가자격 등 | 제일엔지니어링 | PM, PMO, 기술총괄 | 건축설계 | 2026-03-16 | 2026-04-30 | 46 | 0.0 | 100 | 100 | 0.0 | 0 | 나라장터 공고 이력 |  | 완료 |  |
| 31b50aa9-577d-81d9-a5f6-e021da4a6ad7 | [3.2.1] 디지털 OASIS 사용자 서비스 | 3.2.1 | 3 | 나라장터 발주 지원 | 디지털 OASIS 사용자 서비스 / 서비스 인프라 구축 용역사업으로 통합하여 나라장터를 통해 사업발주 | 제일엔지니어링 |  |  | 2025-08-28 | 2025-09-08 | 12 | 0.0 | 100 | 90.0 | -10.0 | 0 | 나라장터 공고 이력 |  | 진행중 |  |
| 31b50aa9-577d-8185-9263-ec916ecaaaef | [3.2] 나라장터 발주 지원(사전규격, 본공고) | 3.2 | 2 | 나라장터 발주 지원 | 나라장터 발주 지원(사전규격, 본공고) / 단위사업 나라장터를 통한 입찰공고 | 제일엔지니어링 | 나라장터 입찰공고 | 제일엔지니어링/아산시 | 2024-04-01 | 2026-04-30 | 760 | 0.0 | 100 | 98.0 | -2.0 | 0 | 나라장터 입찰공고 이력 | 완료 / - 상동 | 완료 | 2 |
| 31b50aa9-577d-81a1-ae99-c80893916932 | [3.1.4.7] 메타버스 플랫폼 | 3.1.4.7 | 3 | 나라장터 발주 지원 | 메타버스 플랫폼 / 요구사항 정의서 및 제안요청서 작성 | 제일엔지니어링 | PM, PMO, 기술총괄 |  | 2025-01-01 | 2026-02-28 | 424 | 0.0 | 100 | 100 | 0.0 | 0 | 제안요청서(RFP) | 진행 중 | 완료 |  |
| 31b50aa9-577d-81ef-b148-d59220975bcd | [3.1.4.6] SDDC기반 IT 인프라 구축 | 3.1.4.6 | 3 | 나라장터 발주 지원 | SDDC기반 IT 인프라 구축 / 요구사항 정의서 및 제안요청서 작성 | 제일엔지니어링 | PM, PMO, 기술총괄 |  | 2025-01-01 | 2025-07-30 | 211 | 0.0 | 100 | 100 | 0.0 | 0 | 제안요청서(RFP) | 완료 | 완료 |  |
| 31b50aa9-577d-8169-9885-fa115f439f5b | [3.1.4.5] AI융복합 서비스 플랫폼 | 3.1.4.5 | 3 | 나라장터 발주 지원 | AI융복합 서비스 플랫폼 / 요구사항 정의서 및 제안요청서 작성 | 제일엔지니어링 | PM, PMO, 기술총괄 |  | 2025-01-01 | 2025-07-30 | 211 | 0.0 | 100 | 100 | 0.0 | 0 | 제안요청서(RFP) | 완료 | 완료 |  |
| 31b50aa9-577d-8141-829b-de6bfb3d7c6c | [3.1.4.4] 이노베이션 센터 조경시설 구축 | 3.1.4.4 | 3 | 나라장터 발주 지원 | 이노베이션 센터 조경시설 구축 / 수의계약(나라장터 조달 구매) | 제일엔지니어링 | 선정업체 | PM, PMO, 기술총괄 | 2025-03-17 | 2025-03-26 | 10 | 0.0 | 100 | 100 | 0.0 | 0 | 나라장터 공사계약서 | 완료 | 완료 |  |
| 31b50aa9-577d-81b5-a027-f9e8722ea364 | [3.1.4.3] 이노베이션 센터 음향시설 구축 | 3.1.4.3 | 3 | 나라장터 발주 지원 | 이노베이션 센터 음향시설 구축 / 수의계약(나라장터 조달 구매) | 제일엔지니어링 | 선정업체 | PM, PMO, 기술총괄 | 2025-03-06 | 2025-03-17 | 12 | 0.0 | 100 | 100 | 0.0 | 0 | 서울지방조달청 분할납품 요구서 | 완료 | 완료 |  |
| 31b50aa9-577d-8121-bca6-d197810e6e88 | [3.1.4.2] 이노베이션 센터 기자재 구매 및 구축 용역 | 3.1.4.2 | 3 | 나라장터 발주 지원 | 이노베이션 센터 기자재 구매 및 구축 용역 / 요구사항 정의서 및 제안요청서 작성 | 제일엔지니어링 | PM, PMO, 기술총괄 | PM, PMO, 기술총괄 | 2025-04-05 | 2025-05-26 | 52 | 0.0 | 100 | 100 | 0.0 | 0 | 제안요청서(RFP), 규격서 등 | 완료 | 완료 |  |
| 31b50aa9-577d-8182-8b45-d48044aa1441 | [3.1.4.1] 이노베이션 센터 인테리어 실시설계 및 시공 용역 | 3.1.4.1 | 3 | 나라장터 발주 지원 | 이노베이션 센터 인테리어 실시설계 및 시공 용역 / 요구사항 정의서 및 제안요청서 작성 | 제일엔지니어링 | 건축설계 | PM, PMO, 기술총괄 | 2024-04-02 | 2024-09-30 | 182 | 0.0 | 100 | 100 | 0.0 | 0 | 제안요청서(RFP) | 완료 | 완료 |  |
| 31b50aa9-577d-8117-8d94-c19daf5e4f53 | [3.1.4] 비즈니스 인큐베이팅 서비스 | 3.1.4 | 3 | 나라장터 발주 지원 | 비즈니스 인큐베이팅 서비스 / 요구사항 정의서 및 제안요청서 작성 | 제일엔지니어링 | PM, PMO, 기술총괄 |  | 2024-04-02 | 2026-02-28 | 698 | 0.0 | 100 | 100 | 0.0 | 0 | 제안요청서(RFP) | 완료 | 완료 |  |
| 31b50aa9-577d-817f-affe-c44ed51c7457 | [3.1.3.2] 시설물 위치기반 표준 서비스 플랫폼 | 3.1.3.2 | 3 | 나라장터 발주 지원 | 시설물 위치기반 표준 서비스 플랫폼 / 요구사항 정의서 및 제안요청서 작성 | 제일엔지니어링 | PM, PMO, 기술총괄 |  | 2025-01-01 | 2026-02-28 | 424 | 0.0 | 100 | 100 | 0.0 | 0 | 제안요청서(RFP) | 완료 | 완료 |  |
| 31b50aa9-577d-8172-a0a2-d2a59bf7b679 | [3.1.3.1] 정보관리 서비스 | 3.1.3.1 | 3 | 나라장터 발주 지원 | 정보관리 서비스 / 요구사항 정의서 및 제안요청서 작성 | 제일엔지니어링 | PM, PMO, 기술총괄 |  | 2025-01-01 | 2025-07-30 | 211 | 0.0 | 100 | 100 | 0.0 | 0 | 제안요청서(RFP) | 완료 | 완료 |  |
| 31b50aa9-577d-815a-9c81-d65a96488735 | [3.1.3] 디지털 OASIS 정보관리 서비스 | 3.1.3 | 3 | 나라장터 발주 지원 | 디지털 OASIS 정보관리 서비스 / 요구사항 정의서 및 제안요청서 작성 | 제일엔지니어링 | PM, PMO, 기술총괄 | PM, PMO, 기술총괄 | 2025-01-01 | 2026-02-28 | 424 | 0.0 | 100 | 100 | 0.0 | 0 | 제안요청서(RFP) | 완료 | 완료 |  |
| 31b50aa9-577d-8192-90dc-fcb222ba62b7 | [3.1.2.1] AI통합관제 플랫폼 | 3.1.2.1 | 3 | 나라장터 발주 지원 | AI통합관제 플랫폼 / 요구사항 정의서 및 제안요청서 작성 | 제일엔지니어링 | PM, PMO, 기술총괄 | PM, PMO, 기술총괄 | 2025-01-01 | 2025-07-30 | 211 | 0.0 | 100 | 100 | 0.0 | 0 | 제안요청서(RFP) | 완료 | 완료 |  |
| 31b50aa9-577d-8137-9c28-e23b43aee543 | [3.1.2] 디지털 OASIS 운영자 서비스 | 3.1.2 | 3 | 나라장터 발주 지원 | 디지털 OASIS 운영자 서비스 / 요구사항 정의서 및 제안요청서 작성 | 제일엔지니어링 | PM, PMO, 기술총괄 | PM, PMO, 기술총괄 | 2024-01-01 | 2025-07-30 | 577 | 0.0 | 100 | 100 | 0.0 | 0 | 제안요청서(RFP) | 완료 | 완료 |  |
| 31b50aa9-577d-8109-b3ba-c6114227a6a7 | [3.1.1.8] 네트워크 구축 | 3.1.1.8 | 3 | 나라장터 발주 지원 | 네트워크 구축 / 요구사항 정의, 규격서 및 제안요청서 작성 | 제일엔지니어링 | PM, PMO, 기술총괄 | PM, PMO, 기술총괄 | 2025-01-01 | 2025-06-30 | 181 | 0.0 | 100 | 100 | 0.0 | 0 | 제안요청서(RFP), 규격서 등 | 완료 | 완료 |  |
| 31b50aa9-577d-814a-a142-c4ec2c10cc46 | [3.1.1.7] 스마트공공WiFi | 3.1.1.7 | 3 | 나라장터 발주 지원 | 스마트공공WiFi / 요구사항 정의, 규격서 및 제안요청서 작성 | 제일엔지니어링 | PM, PMO, 기술총괄 | PM, PMO, 기술총괄 | 2025-01-01 | 2025-06-30 | 181 | 0.0 | 100 | 100 | 0.0 | 0 | 제안요청서(RFP), 규격서 등 | 완료 | 완료 |  |
| 31b50aa9-577d-81cb-99f1-d5369b44b983 | [3.1.1.6] 무인매장 | 3.1.1.6 | 3 | 나라장터 발주 지원 | 무인매장 / 요구사항 정의, 규격서 및 제안요청서 작성 | 제일엔지니어링 | PM, PMO, 기술총괄 | 건축설계 | 2025-04-01 | 2026-03-31 | 365 | 0.0 | 100 | 100 | 0.0 | 0 | 제안요청서(RFP), 규격서 등 | 완료 | 완료 |  |
| 31b50aa9-577d-8132-8c63-d79691b16c51 | [3.1.1.5] 스마트폴&디스플레이 | 3.1.1.5 | 3 | 나라장터 발주 지원 | 스마트폴&디스플레이 / 요구사항 정의, 규격서 및 제안요청서 작성 | 제일엔지니어링 | PM, PMO, 기술총괄 | 건축설계 | 2025-04-01 | 2026-03-31 | 365 | 0.0 | 100 | 100 | 0.0 | 0 | 제안요청서(RFP), 규격서 등 | 완료 | 완료 |  |
| 31b50aa9-577d-81c4-b27d-deedb1b41dec | [3.1.1.4] 수요응답형 모빌리티 DRT 서비스 | 3.1.1.4 | 3 | 나라장터 발주 지원 | 수요응답형 모빌리티 DRT 서비스 / 요구사항 정의서 및 제안요청서 작성 | 제일엔지니어링 | PM, PMO, 기술총괄 |  | 2025-04-01 | 2026-03-31 | 365 | 0.0 | 100 | 80.0 | -20.0 | 0 | 제안요청서(RFP) | 완료 | 완료 |  |
| 31b50aa9-577d-8142-8468-f1413614a5c0 | [3.1.1.3] 전자시민증 | 3.1.1.3 | 3 | 나라장터 발주 지원 | 전자시민증 / 요구사항 정의서 및 제안요청서 작성 | 제일엔지니어링 | PM, PMO, 기술총괄 |  | 2025-01-01 | 2025-07-30 | 211 | 0.0 | 100 | 100 | 0.0 | 0 | 제안요청서(RFP) | 완료 | 완료 |  |
| 31b50aa9-577d-8153-b56f-e63d304da4c7 | [3.1.1.2] 디지털 노마드 접수/운영/거래 | 3.1.1.2 | 3 | 나라장터 발주 지원 | 디지털 노마드 접수/운영/거래 / 서비스 인프라 구축 용역사업으로 통합 | 제일엔지니어링 | PM, PMO, 기술총괄 |  | 2025-01-01 | 2025-07-30 | 211 | 0.0 | 100 | 100 | 0.0 | 0 | 제안요청서 | 완료 | 완료 |  |
| 31b50aa9-577d-8110-86a0-f76aa6a98f66 | [3.1.1.1] 디지털 OASIS SPOT 구축 용역 | 3.1.1.1 | 3 | 나라장터 발주 지원 | 디지털 OASIS SPOT 구축 용역 / 토목, 이동형 트레일러 구축 요구사항 및 입찰 참가자격 등 | 제일엔지니어링 | PM, PMO, 기술총괄 | 건축설계 | 2025-03-01 | 2026-03-31 | 396 | 0.0 | 100 | 100 | 0.0 | 0 | 제안요청서, 규격서, 과업지시서 | 완료 / SPOT대상지 변경에 따른 과업내역 수정/보완 | 완료 |  |
| 31b50aa9-577d-81d8-a022-dc3d9cac0862 | [3.1.1] 디지털 OASIS 사용자 서비스 | 3.1.1 | 3 | 나라장터 발주 지원 | 디지털 OASIS 사용자 서비스 | 제일엔지니어링 |  |  | 2025-01-01 | 2026-03-31 | 455 | 0.0 | 100 | 98.0 | -2.0 | 0 | 제안요청서, 규격서, 과업지시서 |  | 진행중 |  |
| 31b50aa9-577d-8176-ab7b-cd00046c11e6 | [3.1] RFP/규격서 작성 | 3.1 | 2 | 나라장터 발주 지원 | RFP/규격서 작성 / 세부 규격(요구사항 및 사양)·검수 기준·시험 항목, 국가계약법/지방계약법에 따른 입찰 참가자격 등 확정 | 제일엔지니어링 | 나라장터 입찰공고 | 제일엔지니어링 | 2024-04-01 | 2026-03-31 | 730 | 0.0 | 100 | 99.0 | -60.0 | 0 | 제안요청서, 규격서, 과업지시서, 공고문 | 진행 중 / 디지털 OASIS SPOT 미확정에 따름 | 진행중 | 2.5 |
| 31b50aa9-577d-815d-9f4c-dbcd8ff51d31 | [3] 나라장터 발주 지원 | 3 | 1 | 디지털 OASIS SPOT 및 이노베이션 센터 각 1개소 구축 / 판매 데이터·CCTV 연계·디지털 노마드 접수/운영/거래 | 나라장터 발주 지원 / 구축 사업 발주 패키지 구성 및 기술지원 | Fri May 01 2026 16:00:00 GMT+0900 (Korean Standard Time) | 나라장터 입찰공고 | 제일엔지니어링 컨소시엄 | 2024-04-01 | 2026-03-31 | 730 | 10 | 100 | 99.0 | -100 | 0 | 설계보고서(사업개요/일정) | 담당 PL(편의시설) | 진행중 | 2.5 |
| 31b50aa9-577d-8167-a7ca-d960ba0b4d8d | [2.4.2.6] 무인매장 | 2.4.2.6 | 3 | 프로젝트 관리/거버넌스 | 무인매장 / 무인매장 서비스 운영을 위한 시설 구성, 결제 시스템, 출입 관리 시스템 및 IoT 장비 구성 검토와 구축 규모 및 예산 산정 | 제일엔지니어링 | 설계 총괄 | PM, PMO, 기술총괄 | 2025-01-01 | 2026-02-28 | 424 | 0.0 | 100 | 100 | 0.0 | 0 | 무인매장 구축 계획서 | 진행 중 / 디지털 OASIS SPOT 대상지 변경에 따른 수정/보완 필요 | 완료 |  |
| 31b50aa9-577d-81ae-9c4a-fcf0af5fa162 | [2.4.2.5] 디지털 OASIS SPOT 구축(토목+이동형 트레일러 배치 등) | 2.4.2.5 | 3 | 프로젝트 관리/거버넌스 | 디지털 OASIS SPOT 구축(토목+이동형 트레일러 배치 등) / 디지털 OASIS SPOT 서비스 제공을 위한 이동형 트레일러 및 현장 시설 구축 계획 수립, 설치 위치 검토 및 장비 구성 계획 예산산정 | 제일엔지니어링 | 설계 총괄 | PM, PMO, 기술총괄 | 2025-01-01 | 2026-02-28 | 424 | 0.0 | 100 | 100 | 0.0 | 0 | 디지털 OASIS SPOT 구축 계획서 | 진행 중 / 디지털 OASIS SPOT 대상지 변경에 따른 수정/보완 필요 | 완료 |  |
| 31b50aa9-577d-817b-a155-d98b8efe66ba | [2.4.2.4] 수요응답형 버스 구매, 스마트 정류장, 구축 | 2.4.2.4 | 3 | 프로젝트 관리/거버넌스 | 수요응답형 버스 구매, 스마트 정류장, 구축 / 수요응답형(DRT) 버스 운영을 위한 차량 도입 규모 산정, 스마트 정류장 장비 구성 검토, 정류장 위치 선정 및 구축 계획 예산 산정 | 제일엔지니어링 | 설계 총괄 | PM, PMO, 기술총괄 | 2025-01-01 | 2026-02-28 | 424 | 0.0 | 100 | 90.0 | -10.0 | 0 | DRT 차량 및 스마트 정류장 구축 계획서 | 진행 중 / 디지털 OASIS SPOT 대상지 변경에 따른 수정/보완 필요 | 진행중 |  |
| 31b50aa9-577d-81dd-9256-e9bd8595ef29 | [2.4.2.3] 스마트폴&디스플레이 | 2.4.2.3 | 3 | 프로젝트 관리/거버넌스 | 스마트폴&디스플레이 / 스마트폴 및 정보디스플레이 설치를 위한 장비 규격 검토, 설치 위치 선정, 전원 및 통신 연계 설계, 구축 물량 및 예산 산정 | 제일엔지니어링 | 설계 총괄 | PM, PMO, 기술총괄 | 2024-06-01 | 2026-01-31 | 610 | 0.0 | 100 | 100 | 0.0 | 0 | 스마트폴 및 디스플레이 구축 계획서 | 진행 중 / 디지털 OASIS SPOT 대상지 변경에 따른 수정/보완 필요 | 완료 |  |
| 31b50aa9-577d-8198-8806-f503dd1333a5 | [2.4.2.2] 공공WiFi, 네트워크 구축 | 2.4.2.2 | 3 | 시스템 구축 | 공공WiFi, 네트워크 구축 / 공공 WiFi 서비스 제공을 위한 네트워크 장비 구성 및 구축 규모 산정 | 제일엔지니어링 | 기술 총괄 및 설계, 행정/정산 관리 | PM, PMO,(재무관리포함) | 2024-06-01 | 2025-06-30 | 395 | 0.0 | 100 | 100 | 0.0 | 0 | 네트워크 구축 계획서 | 완료 | 완료 |  |
| 31b50aa9-577d-81f2-bfe3-ca9ca567331d | [2.4.2.1] SDDC기반 IT 인프라 구축 | 2.4.2.1 | 3 | 시스템 구축 | SDDC기반 IT 인프라 구축 / SDDC 기반 서버, 스토리지, 가상화, 백업 등 IT 인프라 구성 설계 및 구축 예산 산정 | 제일엔지니어링 | 기술 총괄 및 설계, 행정/정산 관리 | PM, PMO,(재무관리포함) | 2024-03-01 | 2025-07-30 | 517 | 0.0 | 100 | 100 | 0.0 | 0 | IT 인프라 설계서 | 완료 | 완료 |  |
| 31b50aa9-577d-81ab-87dd-ca3563630296 | [2.4.2] IT 및 시설 인프라 구축 | 2.4.2 | 3 | 프로젝트 관리/거버넌스 | IT 및 시설 인프라 구축 / 스마트시티 서비스 운영을 위한 IT 및 네트워크 인프라 구축 규모 산정 및 구축 예산 산정 | 제일엔지니어링 | 기술 총괄 및 설계, 행정/정산 관리 | PM, PMO,(재무관리포함) | 2024-03-01 | 2026-02-28 | 730 | 0.0 | 100 | 100 | 0.0 | 0 | 인프라 구축 예산 산정서 | 완료 | 완료 |  |
| 31b50aa9-577d-8181-b145-ede9e101497e | [2.4.1.7] 메타버스 플랫폼 | 2.4.1.7 | 3 | 서비스 구축 | 메타버스 플랫폼 / 기능점수(Function Point) 기반 예산 산정 | 제일엔지니어링 | 기술 총괄 및 설계, 행정/정산 관리 | PM, PMO,(재무관리포함) | 2025-01-01 | 2025-11-30 | 334 | 0.0 | 100 | 100 | 0.0 | 0 | FP 산정 내역서 | 완료 | 완료 | 9.4 |
| 31b50aa9-577d-81a9-93b2-e6ce9f331409 | [2.4.1.6] AI융복합 서비스 플랫폼 | 2.4.1.6 | 3 | 서비스 구축 | AI융복합 서비스 플랫폼 / 기능점수(Function Point) 기반 예산 산정 | 제일엔지니어링 | 기술 총괄 및 설계, 행정/정산 관리 | PM, PMO,(재무관리포함) | 2024-03-01 | 2025-09-30 | 579 | 0.0 | 100 | 100 | 0.0 | 0 | FP 산정 내역서 | 완료 | 완료 | 8.4 |
| 31b50aa9-577d-8141-9eca-c1373b464b74 | [2.4.1.5] 시설물 위치기반 표준 서비스 플랫폼 | 2.4.1.5 | 3 | 서비스 구축 | 시설물 위치기반 표준 서비스 플랫폼 / 기능점수(Function Point) 기반 예산 산정 | 제일엔지니어링 | 기술 총괄 및 설계, 행정/정산 관리 | PM, PMO,(재무관리포함) | 2025-01-01 | 2025-09-30 | 273 | 0.0 | 100 | 100 | 0.0 | 0 | FP 산정 내역서 | 완료 | 완료 | 7.4 |
| 31b50aa9-577d-81b4-b207-e546183cd501 | [2.4.1.4] 정보관리 서비스 | 2.4.1.4 | 3 | 서비스 구축 | 정보관리 서비스 / 기능점수(Function Point) 기반 예산 산정 | 제일엔지니어링 | 기술 총괄 및 설계, 행정/정산 관리 | PM, PMO,(재무관리포함) | 2024-03-01 | 2025-07-30 | 517 | 0.0 | 100 | 100 | 0.0 | 0 | FP 산정 내역서 | 완료 | 완료 | 6.4 |
| 31b50aa9-577d-81d2-9027-e746353977ef | [2.4.1.3] AI통합관제 플랫폼 | 2.4.1.3 | 3 | 서비스 구축 | AI통합관제 플랫폼 / 기능점수(Function Point) 기반 예산 산정 | 제일엔지니어링 | 기술 총괄 및 설계, 행정/정산 관리 | PM, PMO,(재무관리포함) | 2024-03-01 | 2025-07-30 | 517 | 0.0 | 100 | 100 | 0.0 | 0 | FP 산정 내역서 | 완료 | 완료 | 5.4 |
| 31b50aa9-577d-816f-ae6b-d30722c3ccd0 | [2.4.1.2] 전자시민증 | 2.4.1.2 | 3 | 실시설계 | 전자시민증 / 기능점수(Function Point) 기반 예산 산정 | 제일엔지니어링 | 기술 총괄 및 설계, 행정/정산 관리 | PM, PMO,(재무관리포함) | 2024-03-01 | 2025-07-30 | 517 | 0.0 | 100 | 100 | 0.0 | 0 | FP 산정 내역서 | 완료 | 완료 | 4.4 |
| 31b50aa9-577d-815a-8dc2-f6a127be589c | [2.4.1.1] 디지털 노마드 접수/운영/거래 | 2.4.1.1 | 3 | 실시설계 | 디지털 노마드 접수/운영/거래 / 기능점수(Function Point) 기반 예산 산정 | 제일엔지니어링 | 기술 총괄 및 설계, 행정/정산 관리 | PM, PMO,(재무관리포함) | 2024-03-01 | 2025-07-30 | 517 | 0.0 | 100 | 100 | 0.0 | 0 | FP 산정 내역서 | 완료 | 완료 | 3.4 |
| 31b50aa9-577d-8187-87c4-ea6cf0df9169 | [2.4.1] 서비스 플랫폼별 사업 예산 도출 | 2.4.1 | 3 | 실시설계 | 서비스 플랫폼별 사업 예산 도출 / 기능점수(Function Point) 기반 예산 산정 | 제일엔지니어링 | 기술 총괄 및 설계, 행정/정산 관리 | PM, PMO,(재무관리포함) | 2024-03-01 | 2025-09-30 | 579 | 0.0 | 100 | 100 | 0.0 | 0 | FP 산정 내역서 | 완료 | 완료 | 2.4 |
| 31b50aa9-577d-816d-9e81-e02fd8dbc579 | [2.4] 각 서비스별 정량적 사업예산 도출 | 2.4 | 2 | 프로젝트 관리/거버넌스 | 각 서비스별 정량적 사업예산 도출 / Function Poinit 기반 SW 플랫폼 예산 도출 / HW 종류 및 수량을 확정하고 관련 예산 계획 수립 | 제일엔지니어링 | 기술 총괄 및 설계, 행정/정산 관리 | PM, PMO, 기술총괄, 행정/정산(재무관리 포함) | 2024-01-01 | 2025-09-30 | 639 | 0.0 | 100 | 100 | 0.0 | 0 | SW 플랫폼 FP 자료, / HW 및 상용 SW 가격 산정 자료 |  | 완료 | 2.4 |
| 31b50aa9-577d-8101-b5fb-d0265da5219b | [2.3.2] 공공WiFi, 네트워크 구축 | 2.3.2 | 3 | 시스템 구축 | 공공WiFi, 네트워크 구축 / 설계도면, 네트워크 설계 등 | 제일엔지니어링 | 설계총괄 | PM, PMO, 기술총괄 | 2024-09-01 | 2025-06-30 | 303 | 0.0 | 100 | 100 | 0.0 | 0 | 설계도면, 유무선 네트워크 준공서류 등 | 진행 중 | 완료 | 2.4 |
| 31b50aa9-577d-8138-9f02-ed365465e26f | [2.3.1] SDDC기반 IT 인프라 구축 | 2.3.1 | 3 | 시스템 구축 | SDDC기반 IT 인프라 구축 / 분리망, 가상화, 네트워크, 시스템 아키텍처 관련 문서 작성 | 제일엔지니어링 | 아키텍처 | PM, PMO, 기술총괄 | 2024-03-01 | 2025-07-31 | 518 | 0.0 | 100 | 100 | 0.0 | 0 | SDDC IT 인프라 설계보고서 | 완료 / 선정 전문업체와 최종 협의를 통해 분리망, 보안, MCP 등 보완 | 완료 | 2.1 |
| 31b50aa9-577d-81bd-a041-fdd063f98bb2 | [2.3] IT 인프라 아키텍처 | 2.3 | 2 | 실시설계 | IT 인프라 아키텍처 / IT 인프라 구조 수립, 서버·스토리지·네트워크·보안 등 시스템 구성요소의 아키텍처 설계 및 인프라 구성 방안 작성 | 제일엔지니어링 | 아키텍처 | PM, PMO, 기술총괄 | 2024-03-01 | 2025-07-31 | 518 | 0.0 | 100 | 100 | 0.0 | 0 | 설계문서 | 완료 | 완료 | 2.1 |

| id | name | wbsId | level | category | subCategory | organization | manager | collaborator | startDate | endDate | duration | weight | plannedRate | actualRate | deviation | budget | deliverable | note | status | predecessor |
| --- | --- | --- | --- | --- | --- | --- | --- | --- | --- | --- | --- | --- | --- | --- | --- | --- | --- | --- | --- | --- |
| 31b50aa9-577d-8154-bc67-f17ecf827014 | [2.2.2] 서비스 플랫폼별 설계 문서 | 2.2.2 | 3 | 프로젝트 관리/거버넌스 | 서비스 플랫폼별 설계 문서 / 사용자 시나리오, 인터페이스 정의서, 아키텍처 설계서 작성 | 제일엔지니어링 | 설계총괄 | PM, PMO, 기술총괄 | 2024-06-01 | 2025-09-30 | 487 | 0.0 | 100 | 100 | 0.0 | 0 | 설계문서 | 완료 / 디지털 OASIS SPOT 미확정에 따름 | 완료 | 2.2 |
| 31b50aa9-577d-8108-a400-c4e35446e55d | [2.2.1] 서비스 요구사항 정합화 | 2.2.1 | 3 | 프로젝트 관리/거버넌스 | 서비스 요구사항 정합화 / 각 부문 요구사항 정의서/요구사항 추적표 확정 | 제일엔지니어링 | 설계총괄 | PM, PMO, 기술총괄 | 2024-02-01 | 2025-09-30 | 608 | 0.0 | 100 | 100 | 0.0 | 0 | 요구사항 정의서, 요구사항 추적표 | 완료 / 디지털 OASIS SPOT 미확정에 따름 | 완료 | 2.1 |
| 31b50aa9-577d-8112-85ea-d15171fe9599 | [2.2] 서비스 플랫폼별 설계 문서 | 2.2 | 2 | 실시설계 | 서비스 플랫폼별 설계 문서 / SW 서비스 플랫폼 설계 및 관련 문서 작성 | 제일엔지니어링 | 설계총괄 | PM, PMO, 기술총괄 | 2024-02-01 | 2025-09-30 | 608 | 0.0 | 100 | 100 | 0.0 | 0 | 설계문서 | 완료 | 완료 |  |
| 31b50aa9-577d-81e2-ac86-dfc26d573342 | [2.1.2] 서비스 및 인프라 정보화 전략 계획 | 2.1.2 | 3 | 프로젝트 관리/거버넌스 | 서비스 및 인프라 정보화 전략 계획 / 설계보고서, 정보화 전략계획 보고서, 사업기본계획 및 상세설계 기본안 보고서 작성 | 제일엔지니어링 | 설계총괄 | PM, PMO, 기술총괄 | 2024-01-01 | 2025-06-30 | 547 | 0.0 | 100 | 100 | 0.0 | 0 | 관련 보고서 | 완료 | 완료 |  |
| 31b50aa9-577d-8164-9c21-ef18a2349445 | [2.1.1] 거점(디지털 OASIS SPOT 및 이노베이션 센터 현장 실사 | 2.1.1 | 3 | 프로젝트 관리/거버넌스 | 거점(디지털 OASIS SPOT 및 이노베이션 센터 현장 실사 / 디지털 OASIS SPOT 부지 및 이노베이션 센터 대상지 현장 실사 | 제일엔지니어링 | 건축설계 | PM, PMO | 2024-01-01 | 2025-10-31 | 670 | 0.0 | 100 | 100 | 0.0 | 0 | 실사내역서 | 완료 | 완료 |  |
| 31b50aa9-577d-81c8-866c-f2a55283d223 | [2.1] 현황조사/분석 | 2.1 | 2 | 프로젝트 관리/거버넌스 | 현황조사/분석 / 대상지·현장, 시스템/데이터/인프라 현황 파악 및 분석, 서비스 인프라 정보화 전략 계획 수립 | 제일엔지니어링 | 설계총괄 |  | 2024-01-01 | 2025-10-31 | 670 | 0.0 | 100 | 100 | 0.0 | 0 | 설계보고서(사업개요/일정) | 완료 / 디지털 OASIS SPOT 미확정에 따름 | 완료 | 1.1 |
| 31b50aa9-577d-81bf-bada-c464157be121 | [2] 실시설계 | 2 | 1 | 최종 산출물 제출(설계·구축·운영계획)·성과보고서 | 실시설계 / 현황분 요구사항 상세화, 실시설계 및 관련 문서 작성 | Thu Dec 10 2026 17:00:00 GMT+0900 (Korean Standard Time) | 설계총괄 | 각 단위사업 분야별 | 2024-01-01 | 2025-11-30 | 700 | 10 | 100 | 100 | 0.0 | 0 | 설계보고서(사업개요/일정) | PM, PMO, 기술총괄, 행정/전산 관리 | 완료 | 1.1 |
| 31b50aa9-577d-81fe-9611-cc91af0a17e1 | [1.7] 정산관리 | 1.7 | 2 | 사업총괄 | 정산관리 / 회계정산, 집행점검 대응 등 | 제일엔지니어링 | 행정 및 정산 관리 | 국토부/아산시/제일엔지니어링 | 2023-12-01 | 2026-12-31 | 1127 | 0.0 | 92.0 | 92.0 | 0.0 | 0 | 집행점검, 회계정산 및 감사자료 일체 |  | 진행중 |  |
| 31b50aa9-577d-81ee-b1cc-c57b4119a7c0 | [1.6] 예산관리 | 1.6 | 2 | 사업총괄 | 예산관리 / e나라도움, 지방비 매칭 등 | 제일엔지니어링 | 행정 및 정산 관리 | 아산시 | 2023-12-01 | 2026-12-31 | 1127 | 0.0 | 92.0 | 92.0 | 0.0 | 0 | 예산 관련 자료 일체 |  | 진행중 | 1.2 |
| 31b50aa9-577d-8125-ade6-de716ec66c3d | [1.5] 산출물/형상/변경관리 | 1.5 | 2 | 사업총괄 | 산출물/형상/변경관리 / 산출물 목록, 버전관리 | 제일엔지니어링 | PM, PMO | 개발/설계 | 2024-01-01 | 2026-12-31 | 1096 | 0.0 | 92.0 | 80.0 | -12.0 | 0 | 품질관리 계획서 등 | 진행 중 | 진행중 | 1.1 |
| 31b50aa9-577d-8195-81c8-dfb4d616cd7e | [◆M1] ◆ Milestone: 실시계획 승인(국토부) | ◆M1 | 2 | 마일스톤 | ◆ Milestone: 실시계획 승인(국토부) / 실시계획 승인(최조승인 : 2024.06) | 제일엔지니어링 | 국토부 |  | 2024-06-30 | 2024-06-30 | 1 | 0.0 | 100 | 100 | 0.0 | 0 | 실시계획 변경승인 요청서/실시계획서 | 완료 / Milestone | 완료 | ◆M1 |
| 31b50aa9-577d-8113-94a1-c6372772a8d7 | [1.4] 국토부 실시계획 협의/승인 지원 | 1.4 | 2 | 사업총괄 | 국토부 실시계획 협의/승인 지원 / 실시계획 승인(국토부), 실시계획 변경 승인 협의 및 지원 | 제일엔지니어링 | PMO | 아산시/제일엔지니어링 컨소시엄 | 2024-02-01 | 2026-03-31 | 790 | 0.0 | 100 | 100 | 0.0 | 0 | 실시게획 변경승인 요청 관련 문서 | 완료 / 기간 연장 승인 완료 : 25년 12월 말 / 국토부 실시계획 변경 승인 절차 진행 중(26년 3월 현재) | 완료 | 1.1 |
| 31b50aa9-577d-815e-b567-e0bd7c711ae0 | [1.3.5] 사업 완료 보고 | 1.3.5 | 3 | 사업총괄 | 사업 완료 보고 / 사업 결과보고서 및 3년 운영계획서 작성 | 제일엔지니어링 | PM, PMO | 제일엔지니어링 | 2026-09-30 | 2026-12-31 | 93 | 0.0 | 0.0 | 0.0 | 0.0 | 0 | 결과보고서, 운영계획서 |  | 대기 |  |
| 31b50aa9-577d-810d-abb8-eef44a15fec1 | [1.3.4.3] 26년 연간 성과보고 | 1.3.4.3 | 3 | 사업총괄 | 26년 연간 성과보고 / 26년도 연간보고서 작성 : 국토부, 아산시 | 제일엔지니어링 | PM, PMO | 컨소시엄사 전체 | 2026-11-01 | 2026-12-31 | 61 | 0.0 | 0.0 | 0.0 | 0.0 | 0 |  |  | 대기 |  |
| 31b50aa9-577d-81be-ae3d-e8981117071d | [1.3.4.2] 25년 연간 성과보고 | 1.3.4.2 | 3 | 사업총괄 | 25년 연간 성과보고 / 25년도 연간보고서 작성 : 국토부, 아산시 | 제일엔지니어링 | PM, PMO | 컨소시엄사 전체 | 2026-01-01 | 2026-01-29 | 29 | 0.0 | 100 | 100 | 0.0 | 0 | https://w1708655571-zh1402725.slack.com/archives/C0AEE8VMBQR | 완료 | 완료 |  |
| 31b50aa9-577d-8140-b449-c8c12f0349b5 | [1.3.4.1] 24년 연간 성과보고 | 1.3.4.1 | 3 | 사업총괄 | 24년 연간 성과보고 / 24년도 연간보고서 작성 : 국토부, 아산시 | 제일엔지니어링 | PM, PMO | 컨소시엄사 전체 | 2025-01-01 | 2025-03-25 | 84 | 0.0 | 100 | 100 | 0.0 | 0 | https://w1708655571-zh1402725.slack.com/archives/C0AEE8VMBQR | 완료 | 완료 |  |
| 31b50aa9-577d-8173-9bca-ed79f1a79a72 | [1.3.4] 연간 성과보고 | 1.3.4 | 3 | 사업총괄 | 연간 성과보고 / 사업년도 연간 성과보고서 작성 | 제일엔지니어링 | PM, PMO | 컨소시엄사 전체 | 2024-01-01 | 2026-12-31 | 1096 | 0.0 | 67.0 | 67.0 | 0.0 | 0 |  |  | 진행중 |  |
| 31b50aa9-577d-8164-adee-d2692ae1854c | [1.3.3.12] 26년도 4분기 보고 | 1.3.3.12 | 3 | 사업총괄 | 26년도 4분기 보고 / 26년도 4분기 보고서 작성 | 제일엔지니어링 | PM, PMO | 컨소시엄사 전체 | 2026-11-30 | 2026-12-31 | 32 | 0.0 | 0.0 | 0.0 | 0.0 | 0 |  |  | 대기 |  |
| 31b50aa9-577d-81b0-ade2-e8d55e782593 | [1.3.3.11] 26년도 3분기 보고 | 1.3.3.11 | 3 | 사업총괄 | 26년도 3분기 보고 / 26년도 3분기 보고서 작성 | 제일엔지니어링 | PM, PMO | 컨소시엄사 전체 | 2026-10-01 | 2026-10-15 | 15 | 0.0 | 0.0 | 0.0 | 0.0 | 0 |  |  | 대기 |  |
| 31b50aa9-577d-816b-a5cd-c156e1ee19d3 | [1.3.3.10] 26년도 2분기 보고 | 1.3.3.10 | 3 | 사업총괄 | 26년도 2분기 보고 / 26년도 2분기 보고서 작성 | 제일엔지니어링 | PM, PMO | 컨소시엄사 전체 | 2026-07-01 | 2026-07-15 | 15 | 0.0 | 100 | 100 | 0.0 | 0 |  |  | 완료 |  |
| 31b50aa9-577d-812c-9db6-f3c5a1ee72b8 | [1.3.3.9] 26년도 1분기 보고 | 1.3.3.9 | 3 | 사업총괄 | 26년도 1분기 보고 / 26년도 1분기 보고서 작성 | 제일엔지니어링 | PM, PMO | 컨소시엄사 전체 | 2026-04-01 | 2026-04-15 | 15 | 0.0 | 100 | 100 | 0.0 | 0 |  |  | 완료 |  |
| 31b50aa9-577d-8116-b9c9-db31ed576559 | [1.3.3.8] 25년도 4분기 보고 | 1.3.3.8 | 3 | 사업총괄 | 25년도 4분기 보고 / 25년도 4분기 보고서 작성 | 제일엔지니어링 | PM, PMO | 컨소시엄사 전체 | 2026-01-01 | 2026-01-29 | 29 | 0.0 | 100 | 100 | 0.0 | 0 | https://w1708655571-zh1402725.slack.com/archives/C0ADXU2FBJR | 완료 | 완료 |  |
| 31b50aa9-577d-8128-97eb-cd3e7708093b | [1.3.3.7] 25년도 3분기 보고 | 1.3.3.7 | 3 | 사업총괄 | 25년도 3분기 보고 / 25년도 3분기 보고서 작성 | 제일엔지니어링 | PM, PMO | 컨소시엄사 전체 | 2025-10-01 | 2025-10-23 | 23 | 0.0 | 100 | 100 | 0.0 | 0 | https://w1708655571-zh1402725.slack.com/archives/C0ADXU2FBJR | 완료 | 완료 |  |
| 31b50aa9-577d-81c8-8133-ce026e98b74f | [1.3.3.6] 25년도 2분기 보고 | 1.3.3.6 | 3 | 사업총괄 | 25년도 2분기 보고 / 25년도 2분기 보고서 작성 | 제일엔지니어링 | PM, PMO | 컨소시엄사 전체 | 2025-07-01 | 2025-07-29 | 29 | 0.0 | 100 | 100 | 0.0 | 0 | https://w1708655571-zh1402725.slack.com/archives/C0ADXU2FBJR | 완료 | 완료 |  |
| 31b50aa9-577d-8113-bbae-c8dd86ce5f77 | [1.3.3.5] 25년도 1분기 보고 | 1.3.3.5 | 3 | 사업총괄 | 25년도 1분기 보고 / 25년도 1분기 보고서 작성 | 제일엔지니어링 | PM, PMO | 컨소시엄사 전체 | 2025-03-01 | 2025-04-30 | 61 | 0.0 | 100 | 100 | 0.0 | 0 | https://w1708655571-zh1402725.slack.com/archives/C0ADXU2FBJR | 완료 | 완료 |  |
| 31b50aa9-577d-81f2-bdb1-d142bf65471b | [1.3.3.4] 24년도 4분기 보고 | 1.3.3.4 | 3 | 사업총괄 | 24년도 4분기 보고 / 24년도 4분기 보고서 작성 | 제일엔지니어링 | PM, PMO | 컨소시엄사 전체 | 2024-12-15 | 2025-01-17 | 34 | 0.0 | 100 | 100 | 0.0 | 0 | https://w1708655571-zh1402725.slack.com/archives/C0ADXU2FBJR | 완료 | 완료 |  |
| 31b50aa9-577d-817c-80eb-c4065938a145 | [1.3.3.3] 24년도 3분기 보고 | 1.3.3.3 | 3 | 사업총괄 | 24년도 3분기 보고 / 24년도 3분기 보고서 작성 | 제일엔지니어링 | PM, PMO | 컨소시엄사 전체 | 2024-10-01 | 2024-10-22 | 22 | 0.0 | 100 | 100 | 0.0 | 0 | https://w1708655571-zh1402725.slack.com/archives/C0ADXU2FBJR | 완료 | 완료 |  |
| 31b50aa9-577d-8141-8169-f6abcdd803f0 | [1.3.3.2] 24년도 2분기 보고 | 1.3.3.2 | 3 | 사업총괄 | 24년도 2분기 보고 / 24년도 2분기 보고서 / - 1, 2분기 보고서 동시 제출 | 제일엔지니어링 | PM, PMO | 컨소시엄사 전체 | 2024-06-01 | 2024-07-17 | 47 | 0.0 | 100 | 100 | 0.0 | 0 | https://w1708655571-zh1402725.slack.com/archives/C087YAM80CU/p1739861071135239 | 완료 | 완료 |  |
| 31b50aa9-577d-81d8-ab2e-d6642870035e | [1.3.3.1] 24년도 1분기 보고 | 1.3.3.1 | 3 | 사업총괄 | 24년도 1분기 보고 / 24년도 1분기 보고서 / - 1, 2분기 보고서 동시 제출 | 제일엔지니어링 | PM, PMO | 컨소시엄사 전체 | 2024-06-01 | 2024-07-17 | 47 | 0.0 | 100 | 100 | 0.0 | 0 | https://w1708655571-zh1402725.slack.com/archives/C087YAM80CU/p1739861071135239 | 완료 | 완료 |  |
| 31b50aa9-577d-8173-b745-c86d336c4170 | [1.3.3] 분기 보고서 작성 | 1.3.3 | 3 | 사업총괄 | 분기 보고서 작성 / 분기보고서 | 제일엔지니어링 | PM, PMO | 컨소시엄사 전체 | 2023-12-01 | 2026-12-31 | 1127 | 0.0 | 83.0 | 83.0 | 0.0 | 0 |  | 제출 횟수 | 진행중 |  |
| 31b50aa9-577d-8195-b878-cadd17a523a8 | [1.3.2] 월별 관리카드 | 1.3.2 | 3 | 사업총괄 | 월별 관리카드 / 국토부 보고 | 제일엔지니어링 | PMO | 컨소시엄사 전체 | 2024-04-01 | 2026-12-31 | 1005 | 0.0 | 85.0 | 85.0 | 0.0 | 0 |  |  | 진행중 |  |
| 31b50aa9-577d-81ec-8b09-d66f09bb22e3 | [1.3.1] 회의록 | 1.3.1 | 3 | 사업총괄 | 회의록 / 정기/비정기 회의 회의록 | 제일엔지니어링 | PMO | 컨소시엄사 전체 | 2023-12-01 | 2026-12-31 | 1127 | 0.0 | 80.0 | 80.0 | 0.0 | 0 | https://w1708655571-zh1402725.slack.com/archives/C06ML9UBHEZ |  | 진행중 |  |
| 31b50aa9-577d-81ed-a1f4-d9c94a27b250 | [1.3] 보고/회의 | 1.3 | 2 | 사업총괄 | 보고/회의 / 월별 관리카드, 분기보고, 연간성과보고, 회의록, 이슈/리스크 관리, 비정기 보고 및 회의, 단위사업별 공정보고 | 제일엔지니어링 | PMO | 컨소시엄사 전체 | 2023-12-15 | 2026-12-31 | 1113 | 0.0 | 63.0 | 63.0 | 0.0 | 0 | 정기 보고서/비정기 보고서 등 | 완료 | 완료 | 1.1 |
| 31b50aa9-577d-81e5-9a61-d8bcd550c6f8 | [1.2] 공정 및 사업관리 | 1.2 | 2 | 사업총괄 | 공정 및 사업관리 / 실시설계, 감리, 나라장터 발주, 구축 공정률 관리 | 제일엔지니어링 | PM, PMO | 제일엔지니어링 | 2023-12-01 | 2026-12-31 | 1127 | 0.0 | 80.0 | 80.0 | 0.0 | 0 | 감리 보고서, WBS, 구축 업체 산출물 | 디지털 OASIS SPOT 미확정에 따름 | 진행중 |  |
| 31b50aa9-577d-81a9-8eec-f8ca0eaa609d | [1.1] 킥오프/착수 | 1.1 | 2 | 사업총괄 | 킥오프/착수 / 착수보고, 수행계획(품질·보안·리스크·커뮤니케이션 계획 포함) | 제일엔지니어링 | PMO | 아산시/제일컨소시엄 | 2023-12-01 | 2024-01-31 | 62 | 0.0 | 100 | 100 | 0.0 | 0 | 실시계획서/설계보고서 | 완료 | 완료 |  |
| 31b50aa9-577d-813e-9552-ee7971a90d42 | [1] 프로젝트 관리/거버넌스 | 1 | 1 | 운영·유지관리·SLA·모니터링·기능개선/고도화(계약 범위에 따라) | 프로젝트 관리/거버넌스 / 착수~준공까지 PMO 운영, 품질/보안/형상/변경 관리 | Thu Jan 01 2026 17:00:00 GMT+0900 (Korean Standard Time) | PMO | 각 분야 리더 | 2023-12-01 | 2026-12-31 | 1127 | 10 | 88.0 | 87.0 | -2.0 | 0 | 설계보고서(사업개요/일정) | 완료 | 완료 |  |
| 31350aa9-577d-81dd-a55c-c7874383a1ca | 범례 | 범례 | 1 |  |  | 제일엔지니어링 |  |  |  |  | 0 | 0.0 | 0.0 | 0.0 | 0.0 | 0 |  |  | 대기 |  |
| 30c50aa9-577d-8187-acd7-fdd6ea0187bc | 노션 실시간 분석 대시보드 수정 - Claude |  |  |  |  | 제일엔지니어링 |  |  |  |  | 0 | 0.0 | 0.0 | 0.0 | 0.0 | 0 |  |  | 대기 |  |
